# 后期工作流开发计划

Schedule from MS Project, 2009-02-27 to 2009-04-08.
c

## Calendars

- 标准: Mon-Fri 08:00-12:00, 13:00-17:00; Sat-Sun off.

## Resources

| Resource |
| --- |
| 曹松青 |
| 张涛 |
| 邬桂辉 |
| 谢斌 |
| 张慧征 |
| ？ |

## Schedule

| ID | WBS | Task | Duration | Start | Finish | Predecessors | Total slack | Free slack | Constraint | Resources | Work |
| --- | --- | --- | --- | --- | --- | --- | --- | --- | --- | --- | --- |
| 2 | 1 | **Nortek-Workflow系统维护和升级** | 1d? | 2009-02-27 | 2009-02-27 |  | 28d |  |  |  | 16h |
| 3 | 1.1 | 已使用Nortek-Workflow的项目 | 1d? | 2009-02-27 | 2009-02-27 |  | 17d |  |  | ？ | 8h |
| 4 | 1.2 | 可能使用Nortek-Workflow的项目 | 1d? | 2009-02-27 | 2009-02-27 |  | 17d |  |  | ？ | 8h |
| 6 | 2 | **南车项目** | 5d? | 2009-02-27 | 2009-03-05 |  | 0d |  |  |  | 40h |
| 7 | 2.1 | 启动项目发起流程 | 2d? | 2009-02-27 | 2009-03-02 |  | 0d |  |  | 张慧征 | 16h |
| 8 | 2.2 | 项目管理接口 | 1d? | 2009-03-03 | 2009-03-03 | 7 | 0d |  | start no earlier than 2009-03-03 | 张慧征 | 8h |
| 9 | 2.3 | 为项目管理提供流程定义页面 | 2d? | 2009-03-04 | 2009-03-05 | 8 | 0d |  |  | 张慧征 | 16h |
| 11 | 3 | **602项目** | 15d? | 2009-02-27 | 2009-03-19 |  | 2d |  |  |  | 216h |
| 12 | 3.1 | 任务列表页面 | 3d? | 2009-02-27 | 2009-03-03 |  | 12d | 0d |  | 邬桂辉 | 24h |
| 13 | 3.2 | 602项目PDM接口 | 2d? | 2009-03-04 | 2009-03-05 | 12 | 12d |  |  | 邬桂辉 | 16h |
| 14 | 3.3 | 602项目PDM接口流程节点属性定义 | 1d? | 2009-03-02 | 2009-03-02 |  | 1d | 0d | start no earlier than 2009-03-02 | 张涛 | 8h |
| 15 | 3.4 | 流程定义工具根据分辨率自动调整窗口大小 | 1d? | 2009-03-03 | 2009-03-03 | 14 | 1d | 0d |  | 张涛 | 8h |
| 16 | 3.5 | 任务统计webservice | 3d? | 2009-03-06 | 2009-03-10 | 9 | 0d |  |  | 张慧征 | 24h |
| 17 | 3.6 | 设计执行任务的输入/输出数据接口 | 3d? | 2009-03-04 | 2009-03-06 | 15 | 1d | 0d |  | 张涛 | 24h |
| 18 | 3.7 | 流程引擎解析组件模板的输入输出数据 | 2d? | 2009-03-09 | 2009-03-10 | 17 | 1d | 0d |  | 张涛 | 16h |
| 19 | 3.8 | 输入输出数据关联数据集的显示 | 3d? | 2009-03-11 | 2009-03-13 | 18 | 1d | 0d |  | 张涛 | 24h |
| 20 | 3.9 | 页面导航图片替换 | 2d | 2009-03-09 | 2009-03-10 |  | 0d |  | start no earlier than 2009-03-09 | 邬桂辉 | 16h |
| 21 | 3.10 | 流程系统保存输入/输出数据 | 3d? | 2009-03-11 | 2009-03-13 | 20 | 0d |  | start no earlier than 2009-03-09 | 邬桂辉 | 24h |
| 22 | 3.11 | 流程系统读取输入/输出数据 | 4d? | 2009-03-16 | 2009-03-19 | 21 | 0d |  |  | 邬桂辉 | 32h |
| 24 | 4 | **产品规划** | 21d? | 2009-03-11 | 2009-04-08 |  | 0d |  |  |  | 760h |
| 25 | 4.1 | DDH、数据管理和工作流交互 | 5d? | 2009-03-11 | 2009-03-17 | 16 | 0d |  |  | 张慧征 | 40h |
| 26 | 4.2 | 流程数据的check in 和 check out | 5d? | 2009-03-20 | 2009-03-26 | 22 | 0d |  |  | 邬桂辉 | 40h |
| 27 | 4.3 | **动态修改流程定义设计** | 10d? | 2009-03-18 | 2009-03-31 | 25 | 0d |  |  | 张慧征 | 160h |
| 28 | 4.3.1 | 更新内存中流程定义 | 2d? | 2009-03-18 | 2009-03-19 |  | 0d |  |  | 张慧征 | 16h |
| 29 | 4.3.2 | 修改流程引擎实现 | 4d? | 2009-03-20 | 2009-03-25 | 28 | 0d |  |  | 张慧征 | 32h |
| 30 | 4.3.3 | 动态流程异常处理 | 2d? | 2009-03-26 | 2009-03-27 | 29 | 0d |  |  | 张慧征 | 16h |
| 31 | 4.3.4 | 测试流程引擎 | 2d? | 2009-03-30 | 2009-03-31 | 30 | 0d |  |  | 张慧征 | 16h |

Notes:
- 2: Nortek-Workflow系统维护和升级
- 3: 已使用Nortek-Workflow的项目
- 7: 与项目管理交互。如果项目中关联了流程，则项目启动时，同时发起关联的流程实例。
- 8: 1、项目删除时，需判断流程的状态，如果与项目绑定的流程实例未删除，则项目不可删除； / 2、项目手工结束时，需判断流程是否结束，如果未结束，不能结束项目。
- 9: 操作项目已经关联的流程。可以增加一个流程模板，可以删除已经关联的流程模版。 / 可以为项目重新定义新的流程。 / 2、可停止、删除流程实例。
- 12: 显示三类任务列表，包括待处理任务、正在处理任务和已经完成任务。 / 页面提供查询功能。查询包括，按流程、任务状态、任务开始时间和任务结束时间。
- 14: 1、向PDM发送任务关联数据请求； / 2、读取任务关联数据。
- 15: 流程定义工具根据分辨率自动调整窗口大小。包括流程定义页面和流程监控页面。
- 16: 根据流程类别、流程状态、任务完成人、任务开始时间和任务结束时间统计三种任务数量。
- 17: 工作流系统提供接口实现输入/输出数据和外部系统提供的输入/输出进行交互。 / ===========================细化
- 21: 1、保存输入/输出绑定的定义； / 2、保存关联数据至数据管理。
- 22: 根据流程定义以及关联的数据管理数据显示当前任务节点的输入/输出数据。
- 25: 从流程中获取输入数据，并启动工具。工具产生输出数据，并提交至数据管理，流程中提交任务时判断输出数据完备性，完备提交数据，不完备提示增加输出数据。
- 26: 在执行任务时，任务参与者可以对已经提交的输出数据进行check in 和 check out操作。
- 27: 流程发起后，流程负责人可以修改流程定义，流程实例依据新的流程流转。

| ID | WBS | Task | Duration | Start | Finish | Predecessors | Total slack | Free slack | Resources | Work |
| --- | --- | --- | --- | --- | --- | --- | --- | --- | --- | --- |
| 32 | 4.4 | **流程节点分解为子流程设计** | 6d? | 2009-04-01 | 2009-04-08 | 31 | 0d |  | 张慧征 | 96h |
| 33 | 4.4.1 | 流程定义页面 | 2d? | 2009-04-01 | 2009-04-02 |  | 0d |  | 张慧征 | 16h |
| 34 | 4.4.2 | 更新内存中流程定义 | 2d? | 2009-04-03 | 2009-04-06 | 33 | 0d |  | 张慧征 | 16h |
| 35 | 4.4.3 | 测试流程引擎 | 2d? | 2009-04-07 | 2009-04-08 | 34 | 0d |  | 张慧征 | 16h |
| 36 | 4.5 | **流程多方案** | 9d? | 2009-03-27 | 2009-04-08 | 26 | 0d |  | 邬桂辉 | 144h |
| 37 | 4.5.1 | 设计 | 2d? | 2009-03-27 | 2009-03-30 |  | 0d |  | 邬桂辉 | 16h |
| 38 | 4.5.2 | 修改流程引擎 | 2d? | 2009-03-31 | 2009-04-01 | 37 | 0d |  | 邬桂辉 | 16h |
| 39 | 4.5.3 | 修改发起多方案的任务节点 | 3d? | 2009-04-02 | 2009-04-06 | 38 | 0d |  | 邬桂辉 | 24h |
| 40 | 4.5.4 | 测试多方案 | 2d? | 2009-04-07 | 2009-04-08 | 39 | 0d |  | 邬桂辉 | 16h |
| 41 | 4.6 | **流程定义** | 17d? | 2009-03-16 | 2009-04-07 | 19 | 1d |  | 张涛 | 280h |
| 42 | 4.6.1 | 流程定义活动的Copy/Paste/Cut | 1d? | 2009-03-16 | 2009-03-16 |  | 17d |  | 张涛 | 8h |
| 43 | 4.6.2 | 流程定义的文件另存为图片格式 | 2d | 2009-03-16 | 2009-03-17 |  | 1d | 0d | 张涛 | 16h |
| 44 | 4.6.3 | 流程图片打印 | 2d | 2009-03-18 | 2009-03-19 | 43 | 1d | 0d | 张涛 | 16h |
| 45 | 4.6.4 | 流程预览页面按比例缩放 | 2d | 2009-03-20 | 2009-03-23 | 44 | 1d | 0d | 张涛 | 16h |
| 46 | 4.6.5 | 流程定义面板按比例缩放 | 3d | 2009-03-24 | 2009-03-26 | 45 | 1d | 0d | 张涛 | 24h |
| 47 | 4.6.6 | 流程定义的多个元素同时选中 | 4d | 2009-03-27 | 2009-04-01 | 46 | 1d | 0d | 张涛 | 32h |
| 48 | 4.6.7 | 流程定义的多个元素整体拖动 | 4d | 2009-04-02 | 2009-04-07 | 47 | 1d |  | 张涛 | 32h |

Notes:
- 32: 流程执行过程中将普通活动分解为子流程。
- 41: 流程定义工具中，如果流程图比较复杂，需要对流程图进行缩放。
