# 南车项目需求开发计划

Schedule from MS Project, 2009-04-01 to 2009-05-19.
c

## Calendars

- 标准: Mon-Fri 08:00-12:00, 13:00-17:00; Sat-Sun off.

## Resources

| Resource |
| --- |
| 张涛 |
| 邬桂辉 |
| 张惠征 |
| 张慧征 |

## Schedule

| ID | WBS | Task | Duration | Start | Finish | Predecessors | Total slack | Free slack | Constraint | Resources | Work |
| --- | --- | --- | --- | --- | --- | --- | --- | --- | --- | --- | --- |
| 1 | 1 | **南车项目需求** | 19d? | 2009-04-01 | 2009-04-27 |  | 8d |  |  |  | 488h |
| 2 | 1.1 | **2009-3-25需求** | 13d | 2009-04-01 | 2009-04-17 |  | 14d |  |  |  | 40h |
| 3 | 1.1.1 | **一个输出关联多个文件** | 13d | 2009-04-01 | 2009-04-17 |  | 14d |  |  |  | 40h |
| 4 | 1.1.1.1 | 流程定义 | 1d | 2009-04-01 | 2009-04-01 |  | 27d |  | start no earlier than 2009-04-01 | 张涛 | 8h |
| 5 | 1.1.1.2 | 输出保存 | 2d | 2009-04-14 | 2009-04-15 |  | 17d |  | start no earlier than 2009-04-14 | 邬桂辉 | 16h |
| 6 | 1.1.1.3 | 输入显示 | 2d | 2009-04-16 | 2009-04-17 | 5 | 15d |  |  | 邬桂辉 | 16h |
| 8 | 1.2 | **2009-3-26需求** | 9d | 2009-04-13 | 2009-04-23 |  | 0d |  |  |  | 72h |
| 9 | 1.2.1 | 删除流程发起者仍可以查询流程 | 1d | 2009-04-13 | 2009-04-13 |  | 0d |  | start no earlier than 2009-04-13 | 张慧征 | 8h |
| 10 | 1.2.2 | 检查流程名称为null的异常情况 | 1d | 2009-04-15 | 2009-04-15 |  | 22d | 0d | start no earlier than 2009-04-15 | 张涛 | 8h |
| 11 | 1.2.3 | 点击统计图进入列表需要返回按钮 | 1d | 2009-04-13 | 2009-04-13 |  | 26d |  | start no earlier than 2009-04-13 | 张慧征 | 8h |
| 12 | 1.2.4 | 增加所有查询条件重置功能 | 1d | 2009-04-14 | 2009-04-14 | 9 | 0d |  | start no earlier than 2009-04-14 | 张慧征 | 8h |
| 13 | 1.2.5 | **增加提交仿真报告节点** | 6d | 2009-04-16 | 2009-04-23 |  | 7d |  |  |  | 40h |
| 14 | 1.2.5.1 | 增加流程节点定义 | 1d | 2009-04-16 | 2009-04-16 | 10 | 22d | 0d | start no earlier than 2009-04-15 | 张涛 | 8h |
| 15 | 1.2.5.2 | 任务页面 | 2d | 2009-04-20 | 2009-04-21 | 6 | 14d | 0d |  | 邬桂辉 | 16h |
| 16 | 1.2.5.3 | PDM、数据管理接口 | 2d | 2009-04-22 | 2009-04-23 | 15 | 14d | 0d |  | 邬桂辉 | 16h |
| 18 | 1.3 | **2009-3-30需求** | 9d | 2009-04-07 | 2009-04-17 |  | 6d |  |  |  | 72h |
| 19 | 1.3.1 | 提供中止流程的webservice | 1d | 2009-04-15 | 2009-04-15 | 12 | 17d |  |  | 张慧征 | 8h |
| 20 | 1.3.2 | 一个项目只关联一个流程 | 1d | 2009-04-15 | 2009-04-15 | 12 | 17d |  |  | 张慧征 | 8h |
| 21 | 1.3.3 | 项目管理中显示流程页面 | 1d | 2009-04-15 | 2009-04-15 | 12 | 0d |  |  | 张慧征 | 8h |
| 22 | 1.3.4 | 放大流程定义和流程监控图窗口大小 | 1d | 2009-04-07 | 2009-04-07 |  | 30d |  | start no earlier than 2009-04-07 | 张涛 | 8h |
| 23 | 1.3.5 | 查看流程时把对流程操作按钮去掉 | 1d | 2009-04-17 | 2009-04-17 | 14 | 22d |  |  | 张涛 | 8h |
| 24 | 1.3.6 | 实现流程中所有的“返回”按钮功能 | 1d | 2009-04-16 | 2009-04-16 | 21 | 0d |  |  | 张慧征 | 8h |
| 25 | 1.3.7 | 项目审批被驳回后，可以更改流程定义 | 1d | 2009-04-17 | 2009-04-17 | 24 | 0d |  |  | 张慧征 | 8h |
| 26 | 1.3.8 | 输出数据为枚举值，增加是否取值验证 | 1d | 2009-04-13 | 2009-04-13 |  | 19d |  | start no earlier than 2009-04-13 | 邬桂辉 | 8h |
| 27 | 1.3.9 | 提交至数据管理页面中增加“学科” | 1d | 2009-04-13 | 2009-04-13 |  | 19d |  | start no earlier than 2009-04-13 | 邬桂辉 | 8h |

Notes:
- 21: 在项目管理中查看流程时，流程页面显示在窗口的最后面，不能直接查看
- 24: 系统中部分返回按钮功能不正确，需要完善。

| ID | WBS | Task | Duration | Start | Finish | Predecessors | Total slack | Free slack | Constraint | Resources | Work |
| --- | --- | --- | --- | --- | --- | --- | --- | --- | --- | --- | --- |
| 29 | 1.4 | **2009-3-31需求** | 19d | 2009-04-01 | 2009-04-27 |  | 13d |  |  |  | 72h |
| 30 | 1.4.1 | “任务列表”中增加“待指派任务” | 1d | 2009-04-13 | 2009-04-13 |  | 19d |  | start no earlier than 2009-04-13 | 邬桂辉 | 8h |
| 31 | 1.4.2 | 查询任务类别全部任务列表 | 1d | 2009-04-13 | 2009-04-13 |  | 19d |  | start no earlier than 2009-04-13 | 邬桂辉 | 8h |
| 32 | 1.4.3 | 待处理任务的输入数据只显示，不提供下载 | 1d | 2009-04-13 | 2009-04-13 |  | 19d |  | start no earlier than 2009-04-13 | 邬桂辉 | 8h |
| 33 | 1.4.4 | 流程监控中，任务列表按时间排序 | 1d | 2009-04-20 | 2009-04-20 | 25 | 0d |  |  | 张慧征 | 8h |
| 34 | 1.4.5 | 显示任务（子流程、块活动）执行次数 | 1d | 2009-04-16 | 2009-04-16 | 10 | 5d | 0d |  | 张涛 | 8h |
| 35 | 1.4.6 | **未产生的任务，在监控图和列表中也显示** | 15d | 2009-04-01 | 2009-04-21 |  | 14d |  |  |  | 16h |
| 36 | 1.4.6.1 | 监控图中显示 | 1d | 2009-04-01 | 2009-04-01 |  | 34d |  | start no earlier than 2009-04-01 | 张涛 | 8h |
| 37 | 1.4.6.2 | 列表中显示 | 1d | 2009-04-21 | 2009-04-21 | 33 | 0d |  |  | 张慧征 | 8h |
| 38 | 1.4.7 | 任务取回约束 | 2d | 2009-04-24 | 2009-04-27 | 16 | 5d | 0d |  | 邬桂辉 | 16h |
| 40 | 1.5 | **2009-4-10需求** | 12d? | 2009-04-10 | 2009-04-27 |  | 16d |  |  |  | 232h |
| 41 | 1.5.1 | 美观流程节点 | 1d | 2009-04-20 | 2009-04-20 |  | 21d |  | start no earlier than 2009-04-20 | 张涛 | 8h |
| 42 | 1.5.2 | 屏蔽项目不需要的功能 | 1d | 2009-04-16 | 2009-04-16 | 10 | 22d | 0d |  | 张涛 | 8h |
| 43 | 1.5.3 | 开始、结束的连线右键缺少删除项 | 1d | 2009-04-16 | 2009-04-16 | 10 | 23d |  |  | 张涛 | 8h |
| 44 | 1.5.4 | 转移名称按设置的条件命名 | 1d | 2009-04-16 | 2009-04-16 | 10 | 23d |  |  | 张涛 | 8h |
| 45 | 1.5.5 | 任务节点中的“审核选项”改为“校核选项” | 1d | 2009-04-16 | 2009-04-16 | 10 | 23d |  |  | 张涛 | 8h |
| 46 | 1.5.6 | 增加审核节点类型 | 2d | 2009-04-21 | 2009-04-22 | 41 | 19d |  |  | 张涛 | 16h |
| 47 | 1.5.7 | 屏蔽任务中“外部输入数据” | 1d | 2009-04-16 | 2009-04-16 | 10 | 23d |  | start no earlier than 2009-04-13 | 张涛 | 8h |
| 48 | 1.5.8 | 数据约束改为“数据类型约束” | 1d | 2009-04-16 | 2009-04-16 | 10 | 23d |  | start no earlier than 2009-04-13 | 张涛 | 8h |
| 49 | 1.5.9 | 调整输入输出数据的选择方式 | 1d | 2009-04-14 | 2009-04-14 |  | 25d |  | start no earlier than 2009-04-14 | 张涛 | 8h |
| 50 | 1.5.10 | 修改输入输出数据页面，增加全选和取消选项 | 1d | 2009-04-14 | 2009-04-14 |  | 25d |  | start no earlier than 2009-04-14 | 张涛 | 8h |
| 51 | 1.5.11 | 参与者仅保留用户，屏蔽角色和组 | 1d | 2009-04-16 | 2009-04-16 | 10 | 23d |  | start no earlier than 2009-04-13 | 张涛 | 8h |
| 52 | 1.5.12 | 修改项目关联流程页面 | 1d | 2009-04-15 | 2009-04-15 | 12 | 24d |  |  | 张慧征 | 8h |
| 53 | 1.5.13 | 屏蔽所有ID信息以及包及其相关操作 | 1d | 2009-04-14 | 2009-04-14 | 11 | 25d |  |  | 张慧征 | 8h |
| 54 | 1.5.14 | 项目关联导入的流程 | 1d | 2009-04-14 | 2009-04-14 | 11 | 25d |  |  | 张慧征 | 8h |
| 55 | 1.5.15 | 删除流程后，左侧导航树展开 | 1d | 2009-04-16 | 2009-04-16 | 21 | 23d |  |  | 张慧征 | 8h |
| 56 | 1.5.16 | 流程模板的权限控制 | 1d | 2009-04-24 | 2009-04-24 | 16 | 17d |  |  | 邬桂辉 | 8h |
| 57 | 1.5.17 | 优化数据暂存 | 1d | 2009-04-13 | 2009-04-13 |  | 26d |  | start no earlier than 2009-04-13 | 邬桂辉 | 8h |
| 58 | 1.5.18 | 文件类型约束不可用 | 1d | 2009-04-16 | 2009-04-16 | 10 | 23d |  | start no earlier than 2009-04-13 | 张涛 | 8h |
| 59 | 1.5.19 | 流程中下载数据问题 | 1d | 2009-04-13 | 2009-04-13 |  | 26d |  | start no earlier than 2009-04-13 | 邬桂辉 | 8h |
| 60 | 1.5.20 | 任务页面的“工具”属性项限制太短 | 1d | 2009-04-13 | 2009-04-13 |  | 26d |  | start no earlier than 2009-04-13 | 邬桂辉 | 8h |
| 61 | 1.5.21 | 流程监控中显示任务校核信息 | 1d | 2009-04-15 | 2009-04-15 | 12 | 24d |  |  | 张慧征 | 8h |
| 62 | 1.5.22 | 两个连续的带审核属性的节点 | 1d | 2009-04-16 | 2009-04-16 | 10 | 23d |  |  | 张涛 | 8h |
| 63 | 1.5.23 | 待校核的任务不作为已完成任务 | 1d | 2009-04-13 | 2009-04-13 |  | 26d |  | start no earlier than 2009-04-13 | 邬桂辉 | 8h |
| 64 | 1.5.24 | 项目参与人允许流程查看 | 1d? | 2009-04-10 | 2009-04-10 |  | 27d |  |  |  |  |
| 65 | 1.5.25 | 待处理任务分类 | 2d | 2009-04-24 | 2009-04-27 | 16 | 16d |  |  | 邬桂辉 | 16h |
| 66 | 1.5.26 | “文件类型”改为“数据类型选项” | 1d | 2009-04-13 | 2009-04-13 |  | 26d |  | start no earlier than 2009-04-13 | 张慧征 | 8h |
| 67 | 1.5.27 | 屏蔽任务分类二级菜单 | 1d | 2009-04-13 | 2009-04-13 |  | 26d |  | start no earlier than 2009-04-13 | 邬桂辉 | 8h |
| 68 | 1.5.28 | 项目审批后发起流程 | 1d | 2009-04-15 | 2009-04-15 | 12 | 24d |  |  | 张慧征 | 8h |

Notes:
- 30: 放弃后的任务状态置为待指派任务，产生待指派任务列表
- 31: 增加任务列表中待处理任务、正在处理任务和已经完成任务的链接用于显示相应状态的全部任务列表
- 38: 任务取回应根据下一任务的状态给用户提示，如果下一个任务已经开始，则不能取回
- 41: 相对流程定义区域，流程图节点图形太大，应调小，美观些
- 42: 流程节点定义中本地上传选项等不相关信息项去掉。将屏蔽的功能对应的页面整理成文档 ，并说明如何屏蔽。
- 43: 连接开始、结束的线右键中不可删除
- 44: 流程图连线上：转移的名称应首先默认为设置的转移条件名称，用户可再修改
- 45: 将任务节点中的审核选项改为校核选项
- 46: 可考虑增加单独的审核类型节点，该节点可设置相关输入数据、输出数据，默认带有审核意见选项（如同意、不同意）和意见内容栏
- 47: 任务中外部输入数据去掉
- 48: 数据约束改为数据类型约束
- 49: 输入输出数据的选择，不使用多行下拉框方式，仅起到显示被选的数据，选择数据由选择（原为修改）按钮，弹出选择页面进行挑选
- 50: 修改输入输出数据页面，增加全选和取消选项
- 51: 选择人员，仅保留用户，角色和组去掉
- 52: 在项目中定义流程时，左侧应有+号显示，右侧应显示已选择的模板，对模板的控制应统一有工具栏处理
- 53: 系统中所有的ID信息都隐藏，包的概念和操作都去掉。
- 54: 绑定流程时，进入流程定义页面，在流程定义页面中可导入模板，然后保存，保存后，项目和流程绑定在一起
- 55: 绑定流程后，删除流程操作后，左侧导航树刷新不要收起，以免多次重复操作
- 56: 流程模板的权限控制，一个是在流程系统中的大页签控制，另一个是在项目绑定模板时的控制，应分开
- 57: 流程中提交数据时，无论怎么选，都是将原有数据覆盖掉，如果模型较大，无需重新上传。暂存应提供追加交的功能和不选择则删除的功能；
- 58: 文件类型约束不可用
- 59: 流程中下载数据依然有问题，输出数据无法下载；输入数据可以下载（直接左键点可以，但右键选择另存为不可以）
- 60: 数据中，工具属性项限制太短，增加限制长度，或去掉。
- 61: 流程监控中，校核节点信息覆盖了前一节点的任务信息，监控时应明确区分任务节点和紧跟的校核节点任务信息
- 62: 两个连续的带审核属性的节点，前一个完成后，后一个没有触发。设计流程测试。
- 63: 待校核的任务完成后，已完成任务中没有该完成的任务项；
- 64: 项目信息中，项目参与人允许流程查看，统一修改；
- 65: 待处理任务列表中，应显示是驳回、审核打回、新任务的类别状态
- 66: 模板管理中，文件类型改为数据类型选项
- 67: 左侧任务栏中导航仅起到导航作用，不将任务信息放在下面
- 68: 审批未通过后，再回去初始化绑定流程，再次审批时提示流程未发布不可提交，再次打回后，将绑定的流程发布掉，审批通过后，没有触发流程。检查是否存在bug。

| ID | WBS | Task | Type | Duration | Start | Finish | Predecessors | Total slack | Free slack | Constraint | Resources | Work |
| --- | --- | --- | --- | --- | --- | --- | --- | --- | --- | --- | --- | --- |
| 70 | 2 | **611项目需求** |  | 21d | 2009-04-01 | 2009-04-29 |  | 14d |  |  |  | 104h |
| 71 | 2.1 | 导入模板时可以更改流程名称 |  | 1d | 2009-04-28 | 2009-04-28 | 38 | 5d | 0d |  | 邬桂辉 | 8h |
| 72 | 2.2 | **一个输出关联多个文件** |  | 11d | 2009-04-01 | 2009-04-15 |  | 24d |  |  |  | 40h |
| 73 | 2.2.1 | 流程定义 |  | 1d | 2009-04-01 | 2009-04-01 |  | 34d |  | start no earlier than 2009-04-01 | 张涛 | 8h |
| 74 | 2.2.2 | 输出保存 |  | 2d | 2009-04-10 | 2009-04-13 |  | 24d | 0d |  | 邬桂辉 | 16h |
| 75 | 2.2.3 | 输入显示 |  | 2d | 2009-04-14 | 2009-04-15 | 74 | 24d |  |  | 邬桂辉 | 16h |
| 76 | 2.3 | 增加流程定义查询 |  | 1d | 2009-04-22 | 2009-04-22 | 37 | 19d |  |  | 张慧征 | 8h |
| 77 | 2.4 | 增加撤销“发布”功能 |  | 1d | 2009-04-22 | 2009-04-22 | 37 | 0d |  |  | 张慧征 | 8h |
| 78 | 2.5 | 隐藏“包”定义，只显示流程名 |  | 1d | 2009-04-29 | 2009-04-29 | 71 | 14d |  |  | 邬桂辉 | 8h |
| 79 | 2.6 | 增加流程定义向导 |  | 2d | 2009-04-23 | 2009-04-24 | 77 | 0d |  |  | 张慧征 | 16h |
| 80 | 2.7 | “流程监控”授权 |  | 1d | 2009-04-27 | 2009-04-27 | 79 | 0d |  |  | 张慧征 | 8h |
| 81 | 2.8 | 在数据管理中限制用户操作数据 |  | 1d | 2009-04-29 | 2009-04-29 | 71 | 5d | 0d |  | 邬桂辉 | 8h |
| 83 | 3 | **602项目需求** |  | 1d | 2009-04-20 | 2009-04-20 |  | 21d |  |  |  | 48h |
| 84 | 3.1 | **2009-4-9需求** |  | 1d | 2009-04-20 | 2009-04-20 |  | 21d |  |  |  | 48h |
| 85 | 3.1.1 | 修改“流程管理”模块名称 | milestone | 0d | 2009-04-20 | 2009-04-20 |  | 22d |  | start no earlier than 2009-04-20 |  |  |
| 86 | 3.1.2 | 修改“项目管理”模块名称 |  | 1d | 2009-04-20 | 2009-04-20 |  | 21d |  | start no earlier than 2009-04-20 | 张慧征 | 8h |
| 87 | 3.1.3 | **流程节点增加“业务编号”** |  | 1d | 2009-04-20 | 2009-04-20 |  | 21d |  |  |  | 16h |
| 88 | 3.1.3.1 | 流程定义 |  | 1d | 2009-04-20 | 2009-04-20 |  | 21d |  | start no earlier than 2009-04-20 | 张涛 | 8h |
| 89 | 3.1.3.2 | 任务页面显示“业务编号” |  | 1d | 2009-04-20 | 2009-04-20 |  | 21d |  | start no earlier than 2009-04-20 | 邬桂辉 | 8h |
| 90 | 3.1.4 | 枚举类型值分行显示 | milestone | 0d | 2009-04-20 | 2009-04-20 |  | 22d |  | start no earlier than 2009-04-20 |  |  |
| 91 | 3.1.5 | 已完成任务的显示 |  | 1d | 2009-04-20 | 2009-04-20 |  | 21d |  | start no earlier than 2009-04-20 | 邬桂辉 | 8h |
| 92 | 3.1.6 | 发布“流程模板”的限制 |  | 1d | 2009-04-20 | 2009-04-20 |  | 21d |  | start no earlier than 2009-04-20 | 张慧征 | 8h |
| 93 | 3.1.7 | 调整“流程模板列表” |  | 1d | 2009-04-20 | 2009-04-20 |  | 21d |  | start no earlier than 2009-04-20 | 张慧征 | 8h |
| 96 | 4 | **产品规划** |  | 23d? | 2009-04-17 | 2009-05-19 |  | 0d |  |  |  | 688h |
| 97 | 4.1 | **动态修改流程定义设计** |  | 10d? | 2009-04-28 | 2009-05-11 |  | 0d |  |  | 张慧征 | 160h |
| 98 | 4.1.1 | 更新内存中流程定义 |  | 2d? | 2009-04-28 | 2009-04-29 | 80 | 0d |  |  | 张慧征 | 16h |
| 99 | 4.1.2 | 修改流程引擎实现 |  | 4d? | 2009-04-30 | 2009-05-05 | 98 | 0d |  |  | 张慧征 | 32h |
| 100 | 4.1.3 | 动态流程异常处理 |  | 2d? | 2009-05-06 | 2009-05-07 | 99 | 0d |  |  | 张慧征 | 16h |
| 101 | 4.1.4 | 测试流程引擎 |  | 2d? | 2009-05-08 | 2009-05-11 | 100 | 0d |  |  | 张慧征 | 16h |

Notes:
- 71: 如果不同项目关联相同的流程模板，会在流程定义中产生很多相同名字的流程，不容易分辨那个流程是属于哪个项目，从而引起混乱。希望能够在流程定义中显示得更清楚一些。
- 72: 每个节点的输入输出数据的个数是固定的，那么如果（1）输入的文件数量较多（例如CAD中的装配体文件），操作起来非常麻烦。（2）如果流程中某个节点的输出数据数量不确定，怎么办？
- 74: 每个用户建立的流程，其他所有用户在流程定义中都可见，可发起，这个不太合理，希望能够变成自己定义的流程只有自己能够看到。
- 75: 已经发起的流程无法查看哪个用户是流程的发起者，流程的发起者如何查看？
- 76: 流程定义页面下，如果流程很多，则在左侧的流程列表中会有非常非常多的流程，而发起流程必须在流程定义页面下，这样查找起来非常麻烦,能否建立一个更有效的管理机制。
- 77: 为何要先发布流程才能发起流程？能否整合在一起？另外发布的流程如何撤销发布？
- 78: 定义的流程为何有包名和流程名？是否重复？
- 79: 增加流程定义向导，具体步骤包括：定义流程>发布流程>发起流程 / 创建流程到发起流程步骤过于繁琐。定义流程->定义模板->建立项目->关联项目和模板->启动项目->发布流程->发起流程，能否建议一个向导的机制，完成一个步骤之后自动跳转到下一个步骤。否则一般工程人员肯定摸不着头脑
- 80: 流程监控中，所有具有流程监控权限的用户都能够在管理者监控中查看到所有的项目信息，这个不太合理。应该只有项目管理者才能监控其所管理的项目进度。
- 81: 流程相关的数据（包括正在执行的流程和执行完毕的流程），建议不能被改动（包括移动，删除等操作）。否则，当流程执行时删除数据可能造成下一个节点没有传入数据，对于已执行完的流程，数据应该作为历史记录保存，不能随意进行改动。
- 85: 子模块流程管理需要改名，建议改为流程模板。
- 86: 项目管理这个名称不合适，需要修改。
- 87: 流程定义时，每个活动需要增加一个业务编号，在602所实际业务中对应计划编号（计划编号具有唯一性）。
- 90: 任务执行界面上，枚举类型值应该每行显示一个，将单选框放在值的前面。
- 91: 已完成任务数量太多时应该只显示一定时间内的已完成任务。
- 92: 流程模板在没有流程定义时不能发布。
- 93: 流程模板列表中，修改改成编辑，定义改成流程图，导入列放到最后。
- 97: 流程发起后，流程负责人可以修改流程定义，流程实例依据新的流程流转。

| ID | WBS | Task | Duration | Start | Finish | Predecessors | Total slack | Free slack | Resources | Work |
| --- | --- | --- | --- | --- | --- | --- | --- | --- | --- | --- |
| 102 | 4.2 | **流程节点分解为子流程设计** | 6d? | 2009-05-12 | 2009-05-19 | 101 | 0d |  | 张慧征 | 96h |
| 103 | 4.2.1 | 流程定义页面 | 2d? | 2009-05-12 | 2009-05-13 |  | 0d |  | 张慧征 | 16h |
| 104 | 4.2.2 | 更新内存中流程定义 | 2d? | 2009-05-14 | 2009-05-15 | 103 | 0d |  | 张慧征 | 16h |
| 105 | 4.2.3 | 测试流程引擎 | 2d? | 2009-05-18 | 2009-05-19 | 104 | 0d |  | 张慧征 | 16h |
| 106 | 4.3 | **流程多方案** | 9d? | 2009-04-30 | 2009-05-12 |  | 5d |  | 邬桂辉 | 144h |
| 107 | 4.3.1 | 设计 | 2d? | 2009-04-30 | 2009-05-01 | 81 | 5d | 0d | 邬桂辉 | 16h |
| 108 | 4.3.2 | 修改流程引擎 | 2d? | 2009-05-04 | 2009-05-05 | 107 | 5d | 0d | 邬桂辉 | 16h |
| 109 | 4.3.3 | 修改发起多方案的任务节点 | 3d? | 2009-05-06 | 2009-05-08 | 108 | 5d | 0d | 邬桂辉 | 24h |
| 110 | 4.3.4 | 测试多方案 | 2d? | 2009-05-11 | 2009-05-12 | 109 | 5d |  | 邬桂辉 | 16h |
| 111 | 4.4 | **流程定义** | 18d? | 2009-04-17 | 2009-05-12 |  | 5d |  | 张涛 | 288h |
| 112 | 4.4.1 | 流程定义活动的Copy/Paste/Cut | 1d? | 2009-04-17 | 2009-04-17 | 34 | 5d | 0d | 张涛 | 8h |
| 113 | 4.4.2 | 流程定义的文件另存为图片格式 | 2d | 2009-04-20 | 2009-04-21 | 112 | 5d | 0d | 张涛 | 16h |
| 114 | 4.4.3 | 流程图片打印 | 2d | 2009-04-22 | 2009-04-23 | 113 | 5d | 0d | 张涛 | 16h |
| 115 | 4.4.4 | 流程预览页面按比例缩放 | 2d | 2009-04-24 | 2009-04-27 | 114 | 5d | 0d | 张涛 | 16h |
| 116 | 4.4.5 | 流程定义面板按比例缩放 | 3d | 2009-04-28 | 2009-04-30 | 115 | 5d | 0d | 张涛 | 24h |
| 117 | 4.4.6 | 流程定义的多个元素同时选中 | 4d | 2009-05-01 | 2009-05-06 | 116 | 5d | 0d | 张涛 | 32h |
| 118 | 4.4.7 | 流程定义的多个元素整体拖动 | 4d | 2009-05-07 | 2009-05-12 | 117 | 5d |  | 张涛 | 32h |

Notes:
- 102: 流程执行过程中将普通活动分解为子流程。
- 111: 流程定义工具中，如果流程图比较复杂，需要对流程图进行缩放。
