# 流程定义工作计划_2009_05_20

Schedule from MS Project, 2009-05-20 to 2009-07-22.
PREA

## Calendars

- 标准: Mon-Fri 08:00-12:00, 13:00-17:00; Sat-Sun off.

## Resources

| Resource |
| --- |
| 张涛 |
| 邬桂辉 |

## Schedule

| ID | WBS | Task | Duration | Start | Finish | Predecessors | Total slack | Constraint | Resources | Work |
| --- | --- | --- | --- | --- | --- | --- | --- | --- | --- | --- |
| 1 | 1 | **南车项目** | 3d | 2009-05-20 | 2009-05-22 |  | 0d |  |  | 24h |
| 2 | 1.1 | 根据南车项目反馈问题修改流程定义 | 3d | 2009-05-20 | 2009-05-22 |  | 0d |  | 张涛 | 24h |
| 3 | 2 | **618项目** | 43d | 2009-05-25 | 2009-07-22 |  | 0d |  |  | 432h |
| 4 | 2.1 | **输入/输出参数显示方式更直观** | 4d | 2009-05-25 | 2009-05-28 |  | 0d |  |  | 32h |
| 5 | 2.1.1 | 流程监控中的任务节点通过浮动层显示输入/输出参数 | 2d | 2009-05-25 | 2009-05-26 | 2 | 0d | start no earlier than 2009-05-18 | 张涛 | 16h |
| 6 | 2.1.2 | 流程预览中的任务节点通过浮动层显示输入/输出参数 | 1d | 2009-05-27 | 2009-05-27 | 5 | 0d |  | 张涛 | 8h |
| 7 | 2.1.3 | 流程定义中的活动节点输入/输出数据的查看和下载 | 1d | 2009-05-28 | 2009-05-28 | 6 | 0d |  | 张涛 | 8h |
| 8 | 2.2 | **显示局部流程图** | 7d | 2009-05-29 | 2009-06-08 |  | 0d |  |  | 56h |
| 9 | 2.2.1 | 协同工作区的任务信息界面，增加查看流程信息的按钮 | 1d | 2009-05-29 | 2009-05-29 | 7 | 0d |  | 张涛 | 8h |
| 10 | 2.2.2 | 修改流程预览页面，显示当前任务节点 | 2d | 2009-06-01 | 2009-06-02 | 9 | 0d | start no earlier than 2009-05-20 | 张涛 | 16h |
| 11 | 2.2.3 | 子流程中的任务节点显示 | 2d | 2009-06-03 | 2009-06-04 | 10 | 0d |  | 张涛 | 16h |
| 12 | 2.2.4 | 块活动中的任务节点显示 | 2d | 2009-06-05 | 2009-06-08 | 11 | 0d |  | 张涛 | 16h |
| 13 | 2.3 | **流程分解** | 7d | 2009-06-09 | 2009-06-17 |  | 0d |  |  | 56h |
| 14 | 2.3.1 | 流程分解的前台定义页面 | 1d | 2009-06-09 | 2009-06-09 | 12 | 0d | start no earlier than 2009-06-08 | 张涛 | 8h |
| 15 | 2.3.2 | 流程分解对于子流程的分解定义 | 2d | 2009-06-10 | 2009-06-11 | 14 | 0d |  | 张涛 | 16h |
| 16 | 2.3.3 | 流程分解对于块活动的分解定义 | 2d | 2009-06-12 | 2009-06-15 | 15 | 0d |  | 张涛 | 16h |
| 17 | 2.3.4 | 流程分解的定义页面与后台程序的调试 | 2d | 2009-06-16 | 2009-06-17 | 16 | 0d |  | 张涛 | 16h |
| 18 | 2.4 | **多人审核** | 3d | 2009-06-24 | 2009-06-26 |  | 0d |  |  | 24h |
| 19 | 2.4.1 | 流程定义设置多个审核人员 | 1d | 2009-06-24 | 2009-06-24 | 50 | 0d |  | 张涛 | 8h |
| 20 | 2.4.2 | 修改现有的单人审核相关页面显示 | 1d | 2009-06-25 | 2009-06-25 | 19 | 0d | start no earlier than 2009-06-08 | 张涛 | 8h |
| 21 | 2.4.3 | 多人审核的规则的制定 | 1d | 2009-06-26 | 2009-06-26 | 20 | 0d |  | 张涛 | 8h |
| 22 | 2.5 | **流程图界面美化** | 4d | 2009-07-08 | 2009-07-13 |  | 0d |  |  | 32h |
| 23 | 2.5.1 | 增加知识管理的链接 | 1d | 2009-07-08 | 2009-07-08 | 29 | 0d | start no earlier than 2009-06-08 | 张涛 | 8h |
| 24 | 2.5.2 | 节点任务的完成进度显示 | 1d | 2009-07-09 | 2009-07-09 | 23 | 0d |  | 张涛 | 8h |
| 25 | 2.5.3 | 流程定义外观的图片美化 | 2d | 2009-07-10 | 2009-07-13 | 24 | 0d |  | 张涛 | 16h |

Notes:
- 4: 在流程图中，直观显示任务节点的输入数据和输出数据。
- 5: 鼠标移动到任务节点，显示输入/输出数据
- 8: 在局部流程图中，显示当前节点的前置任务和后置任务
- 13: 流程参与者可以在流程图中直接操作任务
- 22: 流程参与者可以在流程图中直接操作任务

| ID | WBS | Task | Duration | Start | Finish | Predecessors | Total slack | Free slack | Constraint | Resources | Work |
| --- | --- | --- | --- | --- | --- | --- | --- | --- | --- | --- | --- |
| 26 | 2.6 | **全局流程图的显示** | 7d | 2009-06-29 | 2009-07-07 |  | 0d |  |  |  | 56h |
| 27 | 2.6.1 | 全局流程图的设计 | 2d | 2009-06-29 | 2009-06-30 | 21 | 0d |  | start no earlier than 2009-06-08 | 张涛 | 16h |
| 28 | 2.6.2 | 子流程的展开显示处理 | 3d | 2009-07-01 | 2009-07-03 | 27 | 0d |  |  | 张涛 | 24h |
| 29 | 2.6.3 | 块活动的展开显示处理 | 2d | 2009-07-06 | 2009-07-07 | 28 | 0d |  |  | 张涛 | 16h |
| 30 | 2.7 | **增加流程检查点** | 3d | 2009-07-14 | 2009-07-16 |  | 0d |  |  |  | 24h |
| 31 | 2.7.1 | 流程定义拖动增加检查点 | 1d | 2009-07-14 | 2009-07-14 | 25 | 0d |  | start no earlier than 2009-06-08 | 张涛 | 8h |
| 32 | 2.7.2 | 检查点相关任务属性的处理 | 1d | 2009-07-15 | 2009-07-15 | 31 | 0d |  |  | 张涛 | 8h |
| 33 | 2.7.3 | 检查点的保存与读取的处理 | 1d | 2009-07-16 | 2009-07-16 | 32 | 0d |  |  | 张涛 | 8h |
| 34 | 2.8 | **流程分解自动继承活动时间** | 4d | 2009-07-17 | 2009-07-22 |  | 0d |  |  |  | 32h |
| 35 | 2.8.1 | 流程分解页面对于活动时间的正确性提示 | 2d | 2009-07-17 | 2009-07-20 | 33 | 0d |  | start no earlier than 2009-06-08 | 张涛 | 16h |
| 36 | 2.8.2 | 分解活动的开始/结束时间处理 | 2d | 2009-07-21 | 2009-07-22 | 35 | 0d |  |  | 张涛 | 16h |
| 37 | 2.9 | **在流程图中执行任务** | 7d | 2009-06-12 | 2009-06-22 |  | 14d |  |  |  | 56h |
| 38 | 2.9.1 | 流程图中增加执行任务的链接 | 2d | 2009-06-12 | 2009-06-15 | 58 | 14d | 0d | start no earlier than 2009-06-08 | 张涛 | 16h |
| 39 | 2.9.2 | 流程图中的活动节点关联任务信息 | 2d | 2009-06-16 | 2009-06-17 | 38 | 14d | 0d |  | 张涛 | 16h |
| 40 | 2.9.3 | 执行任务页面的调试 | 3d | 2009-06-18 | 2009-06-22 | 39 | 14d | 4d |  | 张涛 | 24h |
| 41 | 2.10 | **设置流程节点角色属性** | 8d | 2009-06-29 | 2009-07-08 |  | 10d |  |  |  | 64h |
| 42 | 2.10.1 | 流程定义中按角色分配任务 | 2d | 2009-06-29 | 2009-06-30 | 40 | 10d | 0d | start no earlier than 2009-06-29 | 张涛 | 16h |
| 43 | 2.10.2 | 显示时按任务角色控制操作权限 | 3d | 2009-07-01 | 2009-07-03 | 42 | 10d | 0d |  | 张涛 | 24h |
| 44 | 2.10.3 | 测试与调试 | 3d | 2009-07-06 | 2009-07-08 | 43 | 10d |  |  | 张涛 | 24h |
| 45 | 3 | **产品规划** | 25d | 2009-05-20 | 2009-06-23 |  | 6d |  |  |  | 168h |
| 46 | 3.1 | **子流程间数据互通** | 4d | 2009-06-18 | 2009-06-23 |  | 0d |  |  |  | 32h |
| 47 | 3.1.1 | 前台页面使子流程间的数据可以互用 | 1d | 2009-06-18 | 2009-06-18 | 17 | 0d |  |  | 张涛 | 8h |
| 48 | 3.1.2 | 子流程的活动之间作数据映射 | 1d | 2009-06-19 | 2009-06-19 | 47 | 0d |  | start no earlier than 2009-06-08 | 张涛 | 8h |
| 49 | 3.1.3 | 流程监控里面子流程间数据互通相关程序 | 1d | 2009-06-22 | 2009-06-22 | 48 | 0d |  |  | 张涛 | 8h |
| 50 | 3.1.4 | 查看流程的子流程间数据互通的相关程序 | 1d | 2009-06-23 | 2009-06-23 | 49 | 0d |  |  | 张涛 | 8h |

Notes:
- 26: 流程参与者可以在流程图中直接操作任务
- 30: 流程参与者可以在流程图中直接操作任务
- 34: 流程参与者可以在流程图中直接操作任务
- 37: 流程参与者可以在流程图中直接操作任务
- 41: 按角色划分任务参与者任务权限。

| ID | WBS | Task | Duration | Start | Finish | Predecessors | Total slack | Free slack | Resources | Work |
| --- | --- | --- | --- | --- | --- | --- | --- | --- | --- | --- |
| 51 | 3.2 | **流程图的操作** | 17d | 2009-05-20 | 2009-06-11 |  | 14d |  |  | 136h |
| 52 | 3.2.1 | 流程定义活动的Copy/Paste/Cut | 2d | 2009-05-20 | 2009-05-21 |  | 14d | 0d | 张涛 | 16h |
| 53 | 3.2.2 | 流程定义的文件另存为图片格式 | 2d | 2009-05-22 | 2009-05-25 | 52 | 14d | 0d | 张涛 | 16h |
| 54 | 3.2.3 | 流程图片打印 | 1d | 2009-05-26 | 2009-05-26 | 53 | 14d | 0d | 张涛 | 8h |
| 55 | 3.2.4 | 流程预览页面按比例缩放 | 3d | 2009-05-27 | 2009-05-29 | 54 | 14d | 0d | 张涛 | 24h |
| 56 | 3.2.5 | 流程定义面板按比例缩放 | 3d | 2009-06-01 | 2009-06-03 | 55 | 14d | 0d | 张涛 | 24h |
| 57 | 3.2.6 | 流程定义的多个元素同时选中 | 3d | 2009-06-04 | 2009-06-08 | 56 | 14d | 0d | 张涛 | 24h |
| 58 | 3.2.7 | 流程定义的多个元素整体拖动 | 3d | 2009-06-09 | 2009-06-11 | 57 | 14d | 0d | 张涛 | 24h |

Notes:
- 51: 流程定义工具中，如果流程图比较复杂，需要对流程图进行缩放。
