Schedule from MS Project, 2006-10-27 to 2012-10-04.

## Calendars

- 标准: Mon-Fri 08:00-12:00, 13:00-17:00; Sat-Sun off.

## Resources

| Resource |
| --- |
| 刘子兴 |
| 杨波 |
| 全体 |
| 张铮 |
| 李晓东 |
| 安兴华 |
| 齐宁 |
| 胡峻峰 |
| 姜磊 |
| 张铮安兴华 |
| 井晓丹 |
| 耿笑翾 |
| 肖凡 |
| 李青田 |
| 白国量 |
| 董房伟 |
| 待定 |

## Schedule

| ID | WBS | Task | Duration | Start | Finish | Predecessors | Total slack | Free slack | Constraint | Resources | Work |
| --- | --- | --- | --- | --- | --- | --- | --- | --- | --- | --- | --- |
| 1 | 1 | **功能要求** | 75d | 2012-06-04 | 2012-09-14 |  | 14d |  |  |  | 1464h |
| 2 | 1.1 | DSE环境中校核节点支持 | 3d | 2012-07-18 | 2012-07-20 |  | 57d |  | start no earlier than 2012-07-18 | 李晓东 | 24h |
| 3 | 1.2 | **数据分组** | 50d | 2012-07-09 | 2012-09-14 |  | 14d |  |  | 待定 | 400h |
| 4 | 1.2.1 | **组件** | 1d | 2012-09-10 | 2012-09-10 |  | 14d | 2d |  |  |  |
| 5 | 1.2.1.1 | 分组信息维护 | 1d | 2012-09-10 | 2012-09-10 |  | 14d | 0d | start no earlier than 2012-09-10 |  |  |
| 6 | 1.2.2 | **建模** | 48d | 2012-07-09 | 2012-09-12 |  | 14d | 0d |  |  |  |
| 7 | 1.2.2.1 | 数据创建 | 5d | 2012-07-09 | 2012-07-13 |  | 52d | 0d | start no earlier than 2012-07-09 |  |  |
| 8 | 1.2.2.2 | 数据引用 | 3d | 2012-07-16 | 2012-07-18 | 7 | 52d | 0d |  |  |  |
| 9 | 1.2.2.3 | 数据映射 | 5d | 2012-07-19 | 2012-07-25 | 8 | 52d |  |  |  |  |
| 10 | 1.2.2.4 | 组件分组信息导入集合参数 | 2d | 2012-09-11 | 2012-09-12 | 5, 76 | 17d |  |  |  |  |
| 11 | 1.2.3 | **运行** | 8d | 2012-08-02 | 2012-08-13 |  | 36d | 22d |  |  |  |
| 12 | 1.2.3.1 | 集合参数解析 | 3d | 2012-08-02 | 2012-08-06 |  | 36d | 0d | start no earlier than 2012-08-02 |  |  |
| 13 | 1.2.3.2 | 数据存储 | 3d | 2012-08-07 | 2012-08-09 | 12 | 39d | 0d |  |  |  |
| 14 | 1.2.3.3 | 数据展现 | 2d | 2012-08-10 | 2012-08-13 | 13 | 39d |  |  |  |  |
| 15 | 1.2.4 | 模块联调 | 2d | 2012-09-13 | 2012-09-14 | 4, 6, 11 | 17d |  |  |  |  |
| 16 | 1.3 | **自动执行（805）** | 18d | 2012-07-24 | 2012-08-16 |  | 35d |  |  |  | 160h |
| 17 | 1.3.1 | 远端执行 | 3d | 2012-07-24 | 2012-07-26 |  | 38d | 0d | start no earlier than 2012-07-24 | 李晓东 | 24h |
| 18 | 1.3.2 | 场景联调 | 3d | 2012-07-27 | 2012-07-31 | 17 | 38d | 0d |  | 李晓东 | 24h |
| 19 | 1.3.3 | **本地执行** | 5d | 2012-08-01 | 2012-08-07 |  | 35d |  |  |  | 56h |
| 20 | 1.3.3.1 | 方案设计 | 2d | 2012-08-01 | 2012-08-02 | 18 | 38d | 0d |  | 李晓东; 杨波 | 32h |
| 21 | 1.3.3.2 | 接口实现 | 2d | 2012-08-03 | 2012-08-06 | 20 | 38d | 0d |  | 李晓东 | 16h |
| 22 | 1.3.3.3 | 场景联调 | 1d | 2012-08-07 | 2012-08-07 | 21 | 38d | 0d |  | 李晓东 | 8h |
| 23 | 1.3.4 | **全自动流程** | 7d | 2012-08-08 | 2012-08-16 |  | 35d |  |  |  | 56h |
| 24 | 1.3.4.1 | 方案设计 | 2d | 2012-08-08 | 2012-08-09 | 22 | 38d |  |  | 李晓东 | 16h |
| 25 | 1.3.4.2 | 网络配置 | 3d | 2012-08-10 | 2012-08-14 | 24 | 38d |  |  | 李晓东 | 24h |
| 26 | 1.3.4.3 | 场景联调 | 2d | 2012-08-15 | 2012-08-16 | 25 | 38d |  |  | 李晓东 | 16h |
| 27 | 1.4 | QMAX接口支持 | 2d | 2012-08-08 | 2012-08-09 | 22 | 43d |  |  | 李晓东 | 16h |

| ID | WBS | Task | Duration | Start | Finish | Predecessors | Total slack | Free slack | Constraint | Resources | Work |
| --- | --- | --- | --- | --- | --- | --- | --- | --- | --- | --- | --- |
| 28 | 1.5 | **流程循环** | 42d | 2012-07-09 | 2012-09-04 |  | 22d |  |  |  | 168h |
| 29 | 1.5.1 | 功能设计 | 3d | 2012-07-09 | 2012-07-11 |  | 43d | 15d | start no earlier than 2012-07-09 | 杨波 | 24h |
| 30 | 1.5.2 | **建模** | 5d | 2012-08-02 | 2012-08-08 |  | 28d |  |  |  | 40h |
| 31 | 1.5.2.1 | 循环节点 | 2d | 2012-08-02 | 2012-08-03 | 29, 131 | 28d | 0d | start no earlier than 2012-07-24 | 张铮 | 16h |
| 32 | 1.5.2.2 | 循环条件 | 3d | 2012-08-06 | 2012-08-08 | 31 | 28d | 6d |  | 张铮 | 24h |
| 33 | 1.5.3 | **运行** | 9d | 2012-08-17 | 2012-08-29 |  | 22d |  |  |  | 72h |
| 34 | 1.5.3.1 | 循环节点解析 | 3d | 2012-08-17 | 2012-08-21 | 32, 66 | 22d | 0d | start no earlier than 2012-07-24 | 李晓东 | 24h |
| 35 | 1.5.3.2 | 循环机制引入 | 3d | 2012-08-22 | 2012-08-24 | 34 | 22d | 0d |  | 李晓东 | 24h |
| 36 | 1.5.3.3 | 判定条件支持（次数、枚举判断） | 3d | 2012-08-27 | 2012-08-29 | 35 | 22d | 0d |  | 李晓东 | 24h |
| 37 | 1.5.4 | **监控** | 4d | 2012-08-30 | 2012-09-04 |  | 22d |  |  |  | 32h |
| 38 | 1.5.4.1 | 循环进度统计 | 2d | 2012-08-30 | 2012-08-31 | 36 | 22d | 0d |  | 李晓东 | 16h |
| 39 | 1.5.4.2 | 循环进度展现 | 2d | 2012-09-03 | 2012-09-04 | 38 | 22d |  |  | 张铮 | 16h |
| 40 | 1.6 | **优化过程** | 59d | 2012-06-04 | 2012-08-23 |  | 30d |  |  |  | 504h |
| 41 | 1.6.1 | **建模** | 35d | 2012-06-04 | 2012-07-20 |  | 54d |  |  |  | 208h |
| 42 | 1.6.1.1 | 优化模型创建 | 5d | 2012-06-04 | 2012-06-08 |  | 63d | 0d | start no earlier than 2012-06-04 | 胡峻峰 | 40h |
| 43 | 1.6.1.2 | 优化内组件创建 | 5d | 2012-06-11 | 2012-06-15 | 42 | 63d | 0d |  | 胡峻峰 | 40h |
| 44 | 1.6.1.3 | 优化属性设置 | 5d | 2012-06-18 | 2012-06-22 | 43 | 63d | 0d |  | 胡峻峰 | 40h |
| 45 | 1.6.1.4 | 优化内控制流搭建 | 3d | 2012-06-25 | 2012-06-27 | 44 | 63d | 0d |  | 胡峻峰 | 24h |
| 46 | 1.6.1.5 | 优化内数据映射 | 3d | 2012-06-28 | 2012-07-02 | 45 | 63d | 9d |  | 胡峻峰 | 24h |
| 47 | 1.6.1.6 | 优化节点输入、输出参数提取 | 3d | 2012-07-16 | 2012-07-18 | 46 | 54d | 0d | start no earlier than 2012-07-16 | 张铮 | 24h |
| 48 | 1.6.1.7 | 优化节点数据映射 | 2d | 2012-07-19 | 2012-07-20 | 47 | 54d |  |  | 张铮 | 16h |
| 49 | 1.6.2 | **运行** | 18d | 2012-07-09 | 2012-08-01 |  | 30d |  |  |  | 144h |
| 50 | 1.6.2.1 | 优化模型解析 | 5d | 2012-07-09 | 2012-07-13 |  | 30d | 0d | start no earlier than 2012-07-09 | 姜磊 | 40h |
| 51 | 1.6.2.2 | 优化任务运行 | 3d | 2012-07-16 | 2012-07-18 | 50 | 30d | 0d |  | 姜磊 | 24h |
| 52 | 1.6.2.3 | 优化模型输入参数创建 | 3d | 2012-07-19 | 2012-07-23 | 51 | 30d | 0d |  | 姜磊 | 24h |
| 53 | 1.6.2.4 | 优化模型运行 | 1d | 2012-07-24 | 2012-07-24 | 52 | 30d | 0d |  | 姜磊 | 8h |
| 54 | 1.6.2.5 | 优化模型输出参数接收 | 1d | 2012-07-25 | 2012-07-25 | 53 | 30d | 0d |  | 姜磊 | 8h |
| 55 | 1.6.2.6 | 优化模型输出参数解析 | 2d | 2012-07-26 | 2012-07-27 | 54 | 30d | 0d |  | 姜磊 | 16h |
| 56 | 1.6.2.7 | 优化任务输出参数创建 | 1d | 2012-07-30 | 2012-07-30 | 55 | 30d | 0d |  | 姜磊 | 8h |
| 57 | 1.6.2.8 | 优化任务提交 | 2d | 2012-07-31 | 2012-08-01 | 56 | 30d | 0d |  | 姜磊 | 16h |

| ID | WBS | Task | Duration | Start | Finish | Predecessors | Total slack | Free slack | Constraint | Resources | Work |
| --- | --- | --- | --- | --- | --- | --- | --- | --- | --- | --- | --- |
| 58 | 1.6.3 | **监控** | 16d | 2012-08-02 | 2012-08-23 |  | 30d |  |  |  | 152h |
| 59 | 1.6.3.1 | **状态监控** | 16d | 2012-08-02 | 2012-08-23 |  | 30d |  |  |  | 152h |
| 60 | 1.6.3.1.1 | 优化模型展现 | 3d | 2012-08-02 | 2012-08-06 | 57 | 43d |  |  | 井晓丹 | 24h |
| 61 | 1.6.3.1.2 | **优化内状态展现** | 11d | 2012-08-02 | 2012-08-16 |  | 30d |  |  |  | 88h |
| 62 | 1.6.3.1.2.1 | 获取优化内任务状态 | 3d | 2012-08-02 | 2012-08-06 | 57 | 30d | 0d |  | 姜磊 | 24h |
| 63 | 1.6.3.1.2.2 | 任务状态展现 | 3d | 2012-08-07 | 2012-08-09 | 62 | 30d | 0d |  | 井晓丹 | 24h |
| 64 | 1.6.3.1.2.3 | 实时监控 | 5d | 2012-08-10 | 2012-08-16 | 63 | 30d | 0d |  | 井晓丹 | 40h |
| 65 | 1.6.3.1.3 | 优化进度（优化节点的进度） | 5d | 2012-08-17 | 2012-08-23 | 64 | 30d |  |  | 井晓丹 | 40h |
| 66 | 1.7 | **数据默认值（805）** | 9d | 2012-08-06 | 2012-08-16 |  | 22d | 0d |  |  | 152h |
| 67 | 1.7.1 | **组件** | 6d | 2012-08-06 | 2012-08-13 |  | 22d |  |  |  | 48h |
| 68 | 1.7.1.1 | 对外提供接口中增加默认值信息 | 1d | 2012-08-06 | 2012-08-06 |  | 25d | 0d | start no earlier than 2012-08-06 | 齐宁 | 8h |
| 69 | 1.7.1.2 | 读取输入、输出文件，替换文件参数默认值 | 2d | 2012-08-07 | 2012-08-08 | 68 | 26d | 0d |  | 齐宁 | 16h |
| 70 | 1.7.1.3 | 输入、输出文件展现默认值信息 | 1d | 2012-08-09 | 2012-08-09 | 69 | 26d | 0d |  | 齐宁 | 8h |
| 71 | 1.7.1.4 | 输入、输出文件支持修改默认值信息 | 2d | 2012-08-10 | 2012-08-13 | 70 | 26d | 1d |  | 齐宁 | 16h |
| 72 | 1.7.2 | **建模** | 6d | 2012-08-07 | 2012-08-14 |  | 22d |  |  |  | 48h |
| 73 | 1.7.2.1 | 扩展XPDL中数据的默认值信息 | 1d | 2012-08-07 | 2012-08-07 | 68 | 25d | 0d |  | 安兴华 | 8h |
| 74 | 1.7.2.2 | 展现数据的默认值信息 | 2d | 2012-08-08 | 2012-08-09 | 73 | 25d | 0d |  | 安兴华 | 16h |
| 75 | 1.7.2.3 | 修改数据的默认值信息 | 2d | 2012-08-10 | 2012-08-13 | 74 | 25d | 0d |  | 安兴华 | 16h |
| 76 | 1.7.2.4 | 支持文件参数的下载功能 | 1d | 2012-08-14 | 2012-08-14 | 75 | 25d | 0d |  | 安兴华 | 8h |
| 77 | 1.7.3 | **运行** | 5d | 2012-08-08 | 2012-08-14 |  | 22d |  |  |  | 40h |
| 78 | 1.7.3.1 | 解析数据的默认值信息 | 1d | 2012-08-08 | 2012-08-08 | 73 | 25d | 0d |  | 刘子兴 | 8h |
| 79 | 1.7.3.2 | 发起任务时自动把默认值添加为临时输入 | 2d | 2012-08-09 | 2012-08-10 | 78 | 25d | 0d |  | 刘子兴 | 16h |
| 80 | 1.7.3.3 | 启动工具时，需要自动获取最新的数据（真实或临时） | 2d | 2012-08-13 | 2012-08-14 | 79 | 25d | 0d |  | 刘子兴 | 16h |
| 81 | 1.7.4 | 场景联调 | 2d | 2012-08-15 | 2012-08-16 | 71, 76, 80 | 25d |  |  | 杨波 | 16h |

| ID | WBS | Task | Duration | Start | Finish | Predecessors | Total slack | Free slack | Constraint | Resources | Work |
| --- | --- | --- | --- | --- | --- | --- | --- | --- | --- | --- | --- |
| 82 | 1.8 | **数据导出（805）** | 5d | 2012-08-16 | 2012-08-22 |  | 31d |  |  |  | 40h |
| 83 | 1.8.1 | 任务数据导出Excel | 3d | 2012-08-16 | 2012-08-20 | 135 | 31d | 0d | start no earlier than 2012-08-13 | 耿笑翾 | 24h |
| 84 | 1.8.2 | 支持任务内选族导出的参数列表 | 2d | 2012-08-21 | 2012-08-22 | 83 | 31d |  |  | 耿笑翾 | 16h |
| 85 | 2 | **执行模式** | 1550d | 2006-10-27 | 2012-10-04 |  | 0d |  |  |  | 936h |
| 86 | 2.1 | **设计向导** | 1521d | 2006-10-27 | 2012-08-24 |  | 29d |  |  |  | 192h |
| 87 | 2.1.1 | 功能设计 | 5d | 2012-08-06 | 2012-08-10 |  | 0d |  | start no earlier than 2012-08-06 | 杨波 | 40h |
| 88 | 2.1.2 | 接口定义 | 1d | 2012-08-13 | 2012-08-13 | 87 | 0d |  |  | 杨波 | 8h |
| 89 | 2.1.3 | **建模** | 6d | 2012-08-14 | 2012-08-21 |  | 32d |  |  |  | 48h |
| 90 | 2.1.3.1 | 设计向导节点 | 2d | 2012-08-14 | 2012-08-15 | 88 | 32d | 0d |  | 安兴华 | 16h |
| 91 | 2.1.3.2 | 开始、结束节点规则（唯一） | 1d | 2012-08-16 | 2012-08-16 | 90 | 32d | 0d |  | 安兴华 | 8h |
| 92 | 2.1.3.3 | 分支选择限制（无分支） | 1d | 2012-08-17 | 2012-08-17 | 91 | 32d | 0d |  | 安兴华 | 8h |
| 93 | 2.1.3.4 | 模型搭建 | 2d | 2012-08-20 | 2012-08-21 | 92 | 32d |  |  | 安兴华 | 16h |
| 94 | 2.1.4 | **运行** | 1521d | 2006-10-27 | 2012-08-24 |  | 29d |  |  |  | 96h |
| 95 | 2.1.4.1 | 设计向导模型解析 | 2d | 2012-08-14 | 2012-08-15 | 88, 62 | 25d | 0d |  | 姜磊 | 16h |
| 96 | 2.1.4.2 | 设计向导执行机制引入 | 3d | 2012-08-16 | 2012-08-20 | 95 | 25d | 0d |  | 姜磊 | 24h |
| 97 | 2.1.4.3 | 接口实现 | 2d | 2012-08-21 | 2012-08-22 | 96 | 25d | 0d |  | 姜磊 | 16h |
| 98 | 2.1.4.4 | 默认排序 | 2d | 2006-10-27 | 2006-10-30 |  | 1548d |  |  | 姜磊 | 16h |
| 99 | 2.1.4.5 | 自动跳转 | 1d | 2012-08-23 | 2012-08-23 | 97 | 27d | 0d |  | 姜磊 | 8h |
| 100 | 2.1.4.6 | 本地工具场景联调 | 1d | 2012-08-24 | 2012-08-24 | 99 | 29d |  |  | 杨波; 张铮 | 16h |
| 101 | 2.2 | **数据驱动** | 38d | 2012-08-14 | 2012-10-04 |  | 0d |  |  |  | 744h |
| 102 | 2.2.1 | 功能设计 | 10d | 2012-08-14 | 2012-08-27 | 88 | 0d |  |  | 杨波 | 80h |
| 103 | 2.2.2 | 接口定义 | 3d | 2012-08-28 | 2012-08-30 | 102 | 0d |  |  | 杨波 | 24h |
| 104 | 2.2.3 | **建模** | 16d | 2012-08-31 | 2012-09-21 |  | 9d |  |  |  | 184h |
| 105 | 2.2.3.1 | 数据驱动节点 | 3d | 2012-08-31 | 2012-09-04 | 103 | 9d | 0d |  | 张铮 | 24h |
| 106 | 2.2.3.2 | 数据流向体现 | 5d | 2012-09-05 | 2012-09-11 | 105 | 9d | 0d |  | 张铮 | 40h |

| ID | WBS | Task | Duration | Start | Finish | Predecessors | Total slack | Free slack | Constraint | Resources | Work |
| --- | --- | --- | --- | --- | --- | --- | --- | --- | --- | --- | --- |
| 107 | 2.2.3.3 | **触发条件设置** | 7d | 2012-09-12 | 2012-09-20 |  | 10d |  |  |  | 56h |
| 108 | 2.2.3.3.1 | 枚举 | 2d | 2012-09-12 | 2012-09-13 | 106 | 10d | 0d |  | 安兴华 | 16h |
| 109 | 2.2.3.3.2 | 表达式 | 5d | 2012-09-14 | 2012-09-20 | 108 | 10d |  |  | 安兴华 | 40h |
| 110 | 2.2.3.4 | **模型搭建** | 8d | 2012-09-12 | 2012-09-21 |  | 9d |  |  |  | 64h |
| 111 | 2.2.3.4.1 | 展现模式 | 5d | 2012-09-12 | 2012-09-18 | 106 | 9d | 0d |  | 张铮 | 40h |
| 112 | 2.2.3.4.2 | 效果展现 | 3d | 2012-09-19 | 2012-09-21 | 111 | 9d |  |  | 张铮 | 24h |
| 113 | 2.2.4 | **运行** | 24d | 2012-08-31 | 2012-10-03 |  | 0d |  |  |  | 336h |
| 114 | 2.2.4.1 | 数据驱动模型解析 | 5d | 2012-08-31 | 2012-09-06 | 103 | 0d |  |  | 杨波 | 40h |
| 115 | 2.2.4.2 | 数据驱动执行机制引入 | 5d | 2012-09-07 | 2012-09-13 | 114 | 0d |  |  | 杨波 | 40h |
| 116 | 2.2.4.3 | 接口实现 | 5d | 2012-09-14 | 2012-09-20 | 115 | 7d | 0d |  | 姜磊 | 40h |
| 117 | 2.2.4.4 | **触发条件判断机制** | 14d | 2012-09-14 | 2012-10-03 |  | 1d |  |  |  | 112h |
| 118 | 2.2.4.4.1 | 枚举 | 2d | 2012-09-14 | 2012-09-17 | 115 | 1d | 0d |  | 齐宁 | 16h |
| 119 | 2.2.4.4.2 | 存在 | 1d | 2012-09-18 | 2012-09-18 | 118 | 1d | 0d |  | 齐宁 | 8h |
| 120 | 2.2.4.4.3 | 数值 | 3d | 2012-09-19 | 2012-09-21 | 119 | 1d | 0d |  | 齐宁 | 24h |
| 121 | 2.2.4.4.4 | 表达式 | 5d | 2012-09-24 | 2012-09-28 | 120 | 1d | 0d |  | 齐宁 | 40h |
| 122 | 2.2.4.4.5 | 状态 | 3d | 2012-10-01 | 2012-10-03 | 121 | 1d |  |  | 齐宁 | 24h |
| 123 | 2.2.4.5 | 运行逻辑支持 | 10d | 2012-09-14 | 2012-09-27 | 115 | 5d |  |  | 杨波 | 80h |
| 124 | 2.2.4.6 | 模型完成功能 | 3d | 2012-09-21 | 2012-09-25 | 116 | 7d |  |  | 姜磊 | 24h |
| 125 | 2.2.5 | **监控** | 15d | 2012-09-14 | 2012-10-04 |  | 0d |  |  |  | 120h |
| 126 | 2.2.5.1 | 数据抓取 | 5d | 2012-09-14 | 2012-09-20 | 115 | 0d |  |  | 刘子兴 | 40h |
| 127 | 2.2.5.2 | 状态展现 | 10d | 2012-09-21 | 2012-10-04 | 126 | 0d |  |  | 安兴华 | 80h |
| 128 | 3 | **易用性要求** | 1514d | 2006-10-27 | 2012-08-15 |  | 36d |  |  |  | 152h |
| 129 | 3.1 | **建模** | 8d | 2012-07-23 | 2012-08-01 |  | 28d |  |  |  | 64h |
| 130 | 3.1.1 | 数据映射规则 | 3d | 2012-07-23 | 2012-07-25 |  | 28d | 0d | finish no earlier than 2012-07-25 | 张铮 | 24h |
| 131 | 3.1.2 | 节点拖拽相应速度 | 5d | 2012-07-26 | 2012-08-01 | 130 | 28d | 0d | start no earlier than 2012-07-24 | 张铮 | 40h |

| ID | WBS | Task | Duration | Start | Finish | Predecessors | Total slack | Free slack | Constraint | Resources | Work |
| --- | --- | --- | --- | --- | --- | --- | --- | --- | --- | --- | --- |
| 132 | 3.2 | **部署（805）** | 8d | 2012-08-06 | 2012-08-15 |  | 31d |  |  |  | 64h |
| 133 | 3.2.1 | 多服务整合 | 3d | 2012-08-06 | 2012-08-08 |  | 36d | 0d | start no earlier than 2012-08-06 | 耿笑翾 | 24h |
| 134 | 3.2.2 | 综合设计运行环境配置 | 2d | 2012-08-09 | 2012-08-10 | 133 | 36d | 0d |  | 耿笑翾 | 16h |
| 135 | 3.2.3 | DRM服务整合 | 3d | 2012-08-13 | 2012-08-15 | 134 | 31d | 0d |  | 耿笑翾 | 24h |
| 136 | 3.3 | **运行** | 3d | 2006-10-27 | 2006-10-31 |  | 1547d |  |  |  | 24h |
| 137 | 3.3.1 | 页面自适应 | 3d | 2006-10-27 | 2006-10-31 |  | 1547d |  |  | 待定 | 24h |
| 138 | 4 | **稳定性要求** | 52d | 2012-07-16 | 2012-09-25 |  | 7d |  |  |  | 800h |
| 139 | 4.1 | 新数据管理移植 | 10d | 2012-08-15 | 2012-08-28 | 80 | 30d |  | start no earlier than 2012-08-06 | 刘子兴 | 80h |
| 140 | 4.2 | 场景验证 | 5d | 2012-08-20 | 2012-08-24 |  | 32d |  | start no earlier than 2012-08-20 | 杨波 | 40h |
| 141 | 4.3 | **内存使用结构优化** | 52d | 2012-07-16 | 2012-09-25 |  | 7d |  |  |  | 680h |
| 142 | 4.3.1 | 设计 | 5d | 2012-07-16 | 2012-07-20 |  | 12d | 2d | start no earlier than 2012-07-16 | 耿笑翾; 肖凡 | 80h |
| 143 | 4.3.2 | 数据库移植 | 10d | 2012-07-25 | 2012-08-07 | 142 | 10d | 0d | start no earlier than 2012-07-25 | 耿笑翾; 肖凡 | 160h |
| 144 | 4.3.3 | 数据库应用 | 15d | 2012-08-08 | 2012-08-28 | 143 | 7d | 0d |  | 肖凡 | 120h |
| 145 | 4.3.4 | 统计优化 | 20d | 2012-08-29 | 2012-09-25 | 144 | 7d |  |  | 耿笑翾; 肖凡 | 320h |
| 146 | 5 | **Base项目支持** | 30d | 2012-07-16 | 2012-08-24 |  | 29d |  |  |  | 352h |
| 147 | 5.1 | **618所** | 30d | 2012-07-16 | 2012-08-24 |  | 29d |  |  |  | 240h |
| 148 | 5.1.1 | 问题修正 | 20d | 2012-07-16 | 2012-08-10 |  | 32d | 0d | finish no earlier than 2012-08-10 | 白国量 | 160h |
| 149 | 5.1.2 | 现场调试 | 10d | 2012-08-13 | 2012-08-24 | 148 | 32d |  |  | 白国量 | 80h |
| 150 | 5.2 | **614所** | 18d | 2012-07-23 | 2012-08-15 |  | 36d |  |  |  | 88h |
| 151 | 5.2.1 | MPM接口联调 | 5d | 2012-07-23 | 2012-07-27 |  | 52d |  | start no earlier than 2012-07-23 | 井晓丹 | 40h |
| 152 | 5.2.2 | **模版过滤** | 8d | 2012-08-06 | 2012-08-15 |  | 36d |  |  |  | 48h |
| 153 | 5.2.2.1 | 应用开发 | 3d | 2012-08-06 | 2012-08-08 |  | 44d |  | start no earlier than 2012-08-06 | 董房伟 | 24h |
| 154 | 5.2.2.2 | 现场实施 | 3d | 2012-08-13 | 2012-08-15 |  | 39d |  | start no earlier than 2012-08-13 | 董房伟 | 24h |
| 155 | 5.3 | 舰船所问题修正 | 3d | 2012-07-23 | 2012-07-25 |  | 54d |  | start no earlier than 2012-07-23 | 李青田 | 24h |
