# 综合设计环境项目计划（2012-02-29）

Schedule from MS Project, 2012-02-29 to 2012-07-05.

## Calendars

- 标准: Mon-Fri 08:00-12:00, 13:00-17:00; Sat-Sun off.

## Resources

| Resource |
| --- |
| 杨波 |
| 资源1 |
| 张铮 |
| 资源2 |
| 孔文 |
| 资源3 |
| 资源4 |
| 李青田 |
| 资源5 |
| 资源6 |
| 杨广胜 |
| 赵钦 |
| 冯维 |
| 李坤淼 |
| 程序员A |
| 程序员B |
| 程序员C |
| 程序员D |
| 齐宁 |
| 李晓东 |
| 陈美清 |
| 冯唯 |
| 井晓丹 |
| 资源 |

## Schedule

| ID | WBS | Task | Duration | Start | Finish | Predecessors | Total slack | Free slack | Constraint | Resources | Work |
| --- | --- | --- | --- | --- | --- | --- | --- | --- | --- | --- | --- |
| 1 | 1 | 演示版本开始 | 1d? | 2012-03-01 | 2012-03-01 |  | 78d | 0d | start no earlier than 2012-03-01 |  |  |
| 2 | 2 | 演示版本结束 | 2d? | 2012-03-30 | 2012-04-02 |  | 18d | 0d | start no earlier than 2012-03-30 |  |  |
| 3 | 3 | **统一建模环境** | 92d | 2012-02-29 | 2012-07-05 |  | 0d |  |  |  | 5656h |
| 4 | 3.1 | **组件库** | 37d | 2012-04-13 | 2012-06-04 |  | 3d |  |  | 杨波 | 536h |
| 5 | 3.1.1 | **组件分类维护** | 5d | 2012-04-13 | 2012-04-19 |  | 3d |  |  |  | 40h |
| 6 | 3.1.1.1 | 组件分类位置移动 | 5d | 2012-04-13 | 2012-04-19 | 52 | 3d | 0d | start no earlier than 2012-04-12 | 齐宁 | 40h |
| 7 | 3.1.2 | **组件维护** | 25d | 2012-05-01 | 2012-06-04 |  | 3d |  |  |  | 200h |
| 8 | 3.1.2.1 | 组件发布 | 5d | 2012-05-01 | 2012-05-07 | 20 | 3d | 0d |  | 齐宁 | 40h |
| 9 | 3.1.2.2 | **组件运行** | 10d | 2012-05-08 | 2012-05-21 |  | 3d |  |  |  | 80h |
| 10 | 3.1.2.2.1 | 独立运行 | 5d | 2012-05-08 | 2012-05-14 | 8 | 3d | 0d |  | 齐宁 | 40h |
| 11 | 3.1.2.2.2 | 临时输入 | 5d | 2012-05-15 | 2012-05-21 | 10 | 3d | 0d |  | 齐宁 | 40h |
| 12 | 3.1.2.3 | **组件版本** | 10d | 2012-05-22 | 2012-06-04 |  | 3d |  |  |  | 80h |
| 13 | 3.1.2.3.1 | 版本管理 | 6d | 2012-05-22 | 2012-05-29 | 11 | 3d | 0d |  | 齐宁 | 48h |
| 14 | 3.1.2.3.2 | 版本更新 | 4d | 2012-05-30 | 2012-06-04 | 13 | 3d | 0d |  | 齐宁 | 32h |
| 15 | 3.2 | **公式库** | 44d | 2012-02-29 | 2012-04-30 |  | 40d |  |  | 杨波 | 408h |
| 16 | 3.2.1 | **公式分类维护** | 3d | 2012-04-20 | 2012-04-24 |  | 3d |  |  |  | 24h |
| 17 | 3.2.1.1 | 公式分类位置移动 | 3d | 2012-04-20 | 2012-04-24 | 6 | 3d | 0d | start no earlier than 2012-04-16 | 齐宁 | 24h |
| 18 | 3.2.2 | 公式封装 | 5d | 2012-02-29 | 2012-03-06 |  | 87d |  |  |  |  |
| 19 | 3.2.3 | 公式计算 | 5d | 2012-02-29 | 2012-03-06 |  | 87d |  |  |  |  |
| 20 | 3.2.4 | 公式绑定 | 4d | 2012-04-25 | 2012-04-30 | 17 | 3d | 0d |  | 齐宁 | 32h |
| 21 | 3.3 | **建模环境** | 57d | 2012-04-11 | 2012-06-28 |  | 5d |  |  | 张铮 | 2464h |
| 22 | 3.3.1 | 选择模板 | 3d | 2012-04-23 | 2012-04-25 |  | 13d | 0d | start no earlier than 2012-04-23 | 井晓丹 | 24h |
| 23 | 3.3.2 | 挂接独立模型 | 5d | 2012-04-26 | 2012-05-02 | 22 | 13d | 0d |  | 井晓丹 | 40h |
| 24 | 3.3.3 | **模型修改** | 57d | 2012-04-11 | 2012-06-28 |  | 5d |  |  | 张铮 | 1944h |
| 25 | 3.3.3.1 | **数据流** | 30d | 2012-04-11 | 2012-05-22 |  | 9d |  |  | 张铮 | 400h |
| 26 | 3.3.3.1.1 | 图形化处理 | 10d | 2012-04-11 | 2012-04-24 |  | 9d | 0d | start no earlier than 2012-04-11 | 张铮 | 80h |
| 27 | 3.3.3.1.2 | 数据转换 | 10d | 2012-05-09 | 2012-05-22 | 29 | 9d | 0d |  | 张铮 | 80h |

| ID | WBS | Task | Duration | Start | Finish | Predecessors | Total slack | Free slack | Constraint | Resources | Work |
| --- | --- | --- | --- | --- | --- | --- | --- | --- | --- | --- | --- |
| 28 | 3.3.3.2 | **自动化流程建模** | 39d | 2012-04-25 | 2012-06-18 |  | 9d |  |  | 资源4 | 656h |
| 29 | 3.3.3.2.1 | 设计 | 10d | 2012-04-25 | 2012-05-08 | 26 | 9d | 0d |  | 张铮 | 80h |
| 30 | 3.3.3.2.2 | 控件展现 | 10d | 2012-05-03 | 2012-05-16 | 23 | 13d | 0d |  | 井晓丹 | 80h |
| 31 | 3.3.3.2.3 | 优化参数 | 10d | 2012-05-17 | 2012-05-30 | 30 | 13d | 0d |  | 井晓丹 | 80h |
| 32 | 3.3.3.2.4 | Robot组件转换 | 3d | 2012-05-31 | 2012-06-04 | 31 | 13d | 0d |  | 井晓丹 | 24h |
| 33 | 3.3.3.2.5 | 优化数据流 | 5d | 2012-06-05 | 2012-06-11 | 32 | 13d | 0d |  | 井晓丹 | 40h |
| 34 | 3.3.3.2.6 | 优化控制流 | 5d | 2012-06-12 | 2012-06-18 | 33 | 13d |  |  | 井晓丹 | 40h |
| 35 | 3.3.3.3 | **活动控件** | 36d | 2012-04-30 | 2012-06-18 |  | 5d |  |  |  | 328h |
| 36 | 3.3.3.3.1 | 循环控制 | 3d | 2012-04-30 | 2012-05-02 | 45 | 5d | 0d | start no earlier than 2012-04-23 | 资源1 | 24h |
| 37 | 3.3.3.3.2 | 自动执行 | 2d | 2012-05-03 | 2012-05-04 | 36 | 5d | 0d |  | 资源1 | 16h |
| 38 | 3.3.3.3.3 | 公式关联 | 3d | 2012-05-07 | 2012-05-09 | 37 | 5d | 0d |  | 资源1 | 24h |
| 39 | 3.3.3.3.4 | 数据库工具 | 3d | 2012-05-10 | 2012-05-14 | 38 | 5d | 0d |  | 资源1 | 24h |
| 40 | 3.3.3.3.5 | 驱动类型【数据驱动、流程驱动】 | 10d | 2012-05-15 | 2012-05-28 | 39 | 5d | 0d |  | 资源1 | 80h |
| 41 | 3.3.3.3.6 | 流转条件 | 5d | 2012-05-29 | 2012-06-04 | 40 | 5d | 0d |  | 资源1 | 40h |
| 42 | 3.3.3.3.7 | 复杂参数设计 | 5d | 2012-05-23 | 2012-05-29 | 27 | 9d | 4d |  | 张铮 | 40h |
| 43 | 3.3.3.3.8 | 参数定义-支持复杂参数【数组、集合】 | 10d | 2012-06-05 | 2012-06-18 | 42, 41 | 5d |  |  | 资源1 | 80h |
| 44 | 3.3.3.4 | **模型输入** | 49d | 2012-04-23 | 2012-06-28 |  | 5d |  |  |  | 104h |
| 45 | 3.3.3.4.1 | 输入引入 | 5d | 2012-04-23 | 2012-04-27 |  | 5d |  | start no earlier than 2012-04-23 | 资源1 | 40h |
| 46 | 3.3.3.4.2 | **输入更新** | 8d | 2012-06-19 | 2012-06-28 |  | 5d |  |  |  | 64h |
| 47 | 3.3.3.4.2.1 | 设计时 | 5d | 2012-06-19 | 2012-06-25 | 43 | 5d |  |  | 资源1 | 40h |
| 48 | 3.3.3.4.2.2 | 运行时 | 3d | 2012-06-26 | 2012-06-28 | 47 | 5d |  |  | 资源1 | 24h |
| 49 | 3.4 | **驱动引擎** | 55d | 2012-04-11 | 2012-06-26 |  | 2d |  |  | 杨波 | 1416h |
| 50 | 3.4.1 | **任务执行** | 35d | 2012-04-11 | 2012-05-29 |  | 0d |  |  |  | 368h |
| 51 | 3.4.1.1 | **组件运行** | 2d | 2012-04-11 | 2012-04-12 |  | 3d |  |  |  | 16h |
| 52 | 3.4.1.1.1 | Robot结果文件提取参数 | 2d | 2012-04-11 | 2012-04-12 |  | 3d | 0d | start no earlier than 2012-04-11 | 齐宁 | 16h |

| ID | WBS | Task | Duration | Start | Finish | Predecessors | Total slack | Free slack | Constraint | Resources | Work |
| --- | --- | --- | --- | --- | --- | --- | --- | --- | --- | --- | --- |
| 53 | 3.4.1.2 | **步骤执行** | 27d | 2012-04-23 | 2012-05-29 |  | 0d |  |  |  | 216h |
| 54 | 3.4.1.2.1 | 页面布局 | 2d | 2012-04-23 | 2012-04-24 | 68 | 0d |  |  | 陈美清 | 16h |
| 55 | 3.4.1.2.2 | 知识关联 | 3d | 2012-04-25 | 2012-04-27 | 54 | 0d |  |  | 陈美清 | 24h |
| 56 | 3.4.1.2.3 | 知识备注 | 3d | 2012-04-30 | 2012-05-02 | 55 | 0d |  |  | 陈美清 | 24h |
| 57 | 3.4.1.2.4 | 公式关联 | 5d | 2012-05-03 | 2012-05-09 | 56 | 0d |  |  | 陈美清 | 40h |
| 58 | 3.4.1.2.5 | 输出参数展现 | 4d | 2012-05-10 | 2012-05-15 | 57 | 0d |  |  | 陈美清 | 32h |
| 59 | 3.4.1.2.6 | 输出参数备注 | 3d | 2012-05-16 | 2012-05-18 | 58 | 0d |  |  | 陈美清 | 24h |
| 60 | 3.4.1.2.7 | 历史数据记录 | 4d | 2012-05-21 | 2012-05-24 | 59 | 0d |  |  | 陈美清 | 32h |
| 61 | 3.4.1.2.8 | 默认权限 | 3d | 2012-05-25 | 2012-05-29 | 60 | 0d |  |  | 陈美清 | 24h |
| 62 | 3.4.1.3 | 循环控制 | 5d | 2012-04-16 | 2012-04-20 |  | 7d | 0d | start no earlier than 2012-04-16 | 李晓东 | 40h |
| 63 | 3.4.1.4 | 自动执行 | 4d | 2012-04-23 | 2012-04-26 | 62 | 7d | 0d |  | 李晓东 | 32h |
| 64 | 3.4.1.5 | 优化调用 | 3d | 2012-04-27 | 2012-05-01 | 63 | 7d | 0d |  | 李晓东 | 24h |
| 65 | 3.4.1.6 | 复杂参数展现【数组、集合】 | 5d | 2012-05-02 | 2012-05-08 | 64 | 7d | 0d |  | 李晓东 | 40h |
| 66 | 3.4.2 | **独立工作包** | 6d | 2012-04-13 | 2012-04-20 |  | 0d |  |  |  | 48h |
| 67 | 3.4.2.1 | 新建独立工作包 | 3d | 2012-04-13 | 2012-04-17 |  | 0d |  | start no earlier than 2012-04-13 | 陈美清 | 24h |
| 68 | 3.4.2.2 | 工作包建模-选择模型、新建模型 | 3d | 2012-04-18 | 2012-04-20 | 67 | 0d |  |  | 陈美清 | 24h |
| 69 | 3.4.3 | **流程驱动** | 28d | 2012-04-11 | 2012-05-18 |  | 4d |  |  |  | 224h |
| 70 | 3.4.3.1 | 任务流转 | 10d | 2012-04-11 | 2012-04-24 |  | 4d | 0d | start no earlier than 2012-04-11 | 杨波 | 80h |
| 71 | 3.4.3.2 | 任务驳回 | 2d | 2012-04-25 | 2012-04-26 | 70 | 4d | 0d |  | 杨波 | 16h |
| 72 | 3.4.3.3 | 任务指派 | 2d | 2012-04-27 | 2012-04-30 | 71 | 4d | 0d |  | 杨波 | 16h |
| 73 | 3.4.3.4 | 任务取回 | 2d | 2012-05-01 | 2012-05-02 | 72 | 4d | 0d |  | 杨波 | 16h |
| 74 | 3.4.3.5 | 任务评审 | 3d | 2012-05-03 | 2012-05-07 | 73 | 4d | 0d |  | 杨波 | 24h |
| 75 | 3.4.3.6 | 流程暂停 | 1d | 2012-05-08 | 2012-05-08 | 74 | 4d | 0d |  | 杨波 | 8h |
| 76 | 3.4.3.7 | 流程恢复 | 1d | 2012-05-09 | 2012-05-09 | 75 | 4d | 0d |  | 杨波 | 8h |
| 77 | 3.4.3.8 | 流程结束 | 1d | 2012-05-10 | 2012-05-10 | 76 | 4d | 0d |  | 杨波 | 8h |
| 78 | 3.4.3.9 | 流程中止 | 1d | 2012-05-11 | 2012-05-11 | 77 | 4d | 0d |  | 杨波 | 8h |
| 79 | 3.4.3.10 | 消息通知 | 5d | 2012-05-14 | 2012-05-18 | 78 | 4d | 0d |  | 杨波 | 40h |

| ID | WBS | Task | Duration | Start | Finish | Predecessors | Total slack | Free slack | Constraint | Resources | Work |
| --- | --- | --- | --- | --- | --- | --- | --- | --- | --- | --- | --- |
| 80 | 3.4.4 | **数据驱动** | 35d | 2012-05-09 | 2012-06-26 |  | 7d |  |  |  | 336h |
| 81 | 3.4.4.1 | 流程启动 | 3d | 2012-05-30 | 2012-06-01 | 61 | 0d |  |  | 陈美清 | 24h |
| 82 | 3.4.4.2 | 任务执行 | 5d | 2012-05-09 | 2012-05-15 | 65 | 7d | 0d |  | 李晓东 | 40h |
| 83 | 3.4.4.3 | 任务提交 | 5d | 2012-05-16 | 2012-05-22 | 82 | 7d | 0d |  | 李晓东 | 40h |
| 84 | 3.4.4.4 | 任务流转 | 20d | 2012-05-23 | 2012-06-19 | 83 | 7d | 0d |  | 李晓东 | 160h |
| 85 | 3.4.4.5 | 重复执行 | 5d | 2012-06-20 | 2012-06-26 | 84 | 7d |  |  | 李晓东 | 40h |
| 86 | 3.4.4.6 | 流程结束 | 2d | 2012-06-04 | 2012-06-05 | 81 | 0d |  |  | 陈美清 | 16h |
| 87 | 3.4.4.7 | 流程中止 | 2d | 2012-06-06 | 2012-06-07 | 86 | 0d |  |  | 陈美清 | 16h |
| 88 | 3.5 | **流程监控** | 34d | 2012-05-21 | 2012-07-05 |  | 0d |  |  | 杨波 | 832h |
| 89 | 3.5.1 | **状态监控** | 20d | 2012-06-05 | 2012-07-02 |  | 3d |  |  |  | 160h |
| 90 | 3.5.1.1 | 状态变迁 | 5d | 2012-06-05 | 2012-06-11 | 14 | 3d | 0d |  | 齐宁 | 40h |
| 91 | 3.5.1.2 | 模型 | 5d | 2012-06-12 | 2012-06-18 | 90 | 3d | 0d |  | 齐宁 | 40h |
| 92 | 3.5.1.3 | 优化组件 | 10d | 2012-06-19 | 2012-07-02 | 91 | 3d |  |  | 齐宁 | 80h |
| 93 | 3.5.2 | **数据监控** | 20d | 2012-06-08 | 2012-07-05 |  | 0d |  |  |  | 160h |
| 94 | 3.5.2.1 | 数据流转 | 10d | 2012-06-08 | 2012-06-21 | 87 | 0d |  |  | 陈美清 | 80h |
| 95 | 3.5.2.2 | 模型 | 10d | 2012-06-22 | 2012-07-05 | 94 | 0d |  |  | 陈美清 | 80h |
| 96 | 3.5.3 | **统计** | 30d | 2012-05-21 | 2012-06-29 |  | 4d |  |  |  | 240h |
| 97 | 3.5.3.1 | 查询 | 10d | 2012-05-21 | 2012-06-01 | 79 | 4d | 0d |  | 杨波 | 80h |
| 98 | 3.5.3.2 | 统计数据 | 10d | 2012-06-04 | 2012-06-15 | 97 | 4d | 0d |  | 杨波 | 80h |
| 99 | 3.5.3.3 | 统计图表 | 10d | 2012-06-18 | 2012-06-29 | 98 | 4d |  |  | 杨波 | 80h |
| 100 | 4 | **统一运行环境** | 33d? | 2012-04-11 | 2012-05-25 |  | 29d |  |  |  |  |
| 101 | 4.1 | **主引擎** | 15d? | 2012-05-07 | 2012-05-25 |  | 29d |  |  |  |  |
| 102 | 4.1.1 | **优化模型创建** | 15d? | 2012-05-07 | 2012-05-25 |  | 29d |  |  |  |  |
| 103 | 4.1.1.1 | 优化参数 | 10d? | 2012-05-07 | 2012-05-18 |  | 28d |  | start no earlier than 2012-05-07 |  |  |
| 104 | 4.1.1.2 | 优化节点数据流 | 5d? | 2012-05-21 | 2012-05-25 |  | 23d |  | start no earlier than 2012-05-21 |  |  |
| 105 | 4.1.1.3 | 优化节点子节点 | 5d? | 2012-05-21 | 2012-05-25 |  | 23d |  | finish no earlier than 2012-05-25 |  |  |
| 106 | 4.1.2 | 交互式组件表单 | 10d? | 2012-05-07 | 2012-05-18 |  | 34d |  | start no earlier than 2012-05-07 |  |  |

| ID | WBS | Task | Duration | Start | Finish | Predecessors | Total slack | Free slack | Constraint | Resources | Work |
| --- | --- | --- | --- | --- | --- | --- | --- | --- | --- | --- | --- |
| 107 | 4.2 | **分布式运行环境** | 23d? | 2012-04-11 | 2012-05-11 |  | 39d |  |  |  |  |
| 108 | 4.2.1 | **模型转换器** | 11d? | 2012-04-11 | 2012-04-25 |  | 51d |  |  |  |  |
| 109 | 4.2.1.1 | FileEngine组件解析 | 11d? | 2012-04-11 | 2012-04-25 |  | 45d |  | finish no earlier than 2012-04-25 |  |  |
| 110 | 4.2.1.2 | FileEngine组件转换 | 11d? | 2012-04-11 | 2012-04-25 |  | 45d |  | finish no earlier than 2012-04-25 |  |  |
| 111 | 4.2.1.3 | 非FileEngine组件完善 | 11d? | 2012-04-11 | 2012-04-25 |  | 45d |  | finish no earlier than 2012-04-25 |  |  |
| 112 | 4.2.2 | **数据流** | 12d? | 2012-04-26 | 2012-05-11 |  | 39d |  |  |  |  |
| 113 | 4.2.2.1 | 非文件参数完善 | 3d? | 2012-04-26 | 2012-04-30 |  | 42d |  | finish no earlier than 2012-04-30 |  |  |
| 114 | 4.2.2.2 | 文件参数管理 | 12d? | 2012-04-26 | 2012-05-11 |  | 33d |  | finish no earlier than 2012-05-11 |  |  |
| 115 | 4.3 | **运行时界面** | 25d? | 2012-04-16 | 2012-05-18 |  | 34d |  |  |  |  |
| 116 | 4.3.1 | 节点运行时属性设置 | 5d? | 2012-04-16 | 2012-04-20 |  | 48d |  | finish no earlier than 2012-04-20 |  |  |
| 117 | 4.3.2 | 设计、运行实时切换 | 5d? | 2012-04-16 | 2012-04-20 |  | 48d |  | finish no earlier than 2012-04-20 |  |  |
| 118 | 4.3.3 | 运行时模型监控图 | 15d? | 2012-04-23 | 2012-05-11 |  | 33d |  | finish no earlier than 2012-05-11 |  |  |
| 119 | 4.3.4 | 运行控制 | 15d? | 2012-04-23 | 2012-05-11 |  | 33d |  | finish no earlier than 2012-05-11 |  |  |
| 120 | 4.3.5 | 输入输出参数映射 | 15d? | 2012-04-23 | 2012-05-11 |  | 33d |  | finish no earlier than 2012-05-11 |  |  |
| 121 | 4.3.6 | 运行结果查看 | 5d? | 2012-05-14 | 2012-05-18 |  | 28d |  | finish no earlier than 2012-05-18 |  |  |
| 122 | 4.3.7 | 运行结果发布 | 5d? | 2012-05-14 | 2012-05-18 |  | 28d |  | finish no earlier than 2012-05-18 |  |  |
| 123 | 5 | **质量分步计算 - Flexware扩充功能** | 24d? | 2012-03-05 | 2012-04-05 |  | 65d |  |  |  | 664h |
| 124 | 5.1 | **运行监控** | 10d? | 2012-03-05 | 2012-03-16 |  | 65d |  |  |  | 272h |
| 125 | 5.1.1 | 状态监控 | 10d? | 2012-03-05 | 2012-03-16 |  | 69d | 0d | start no earlier than 2012-03-05 | 程序员A; 程序员B | 160h |
| 126 | 5.1.2 | 提交执行 | 4d? | 2012-03-05 | 2012-03-08 |  | 70d | 0d | start no earlier than 2012-03-05 | 程序员C | 32h |
| 127 | 5.1.3 | 运行中止 | 10d? | 2012-03-05 | 2012-03-16 |  | 65d | 0d | start no earlier than 2012-03-05 | 程序员D | 80h |
| 128 | 5.2 | **数据交换** | 10d | 2012-03-09 | 2012-03-22 |  | 70d |  |  |  | 80h |
| 129 | 5.2.1 | 输入参数解析 | 5d | 2012-03-09 | 2012-03-15 | 126 | 64d | 0d |  | 程序员C | 40h |
| 130 | 5.2.2 | 输出参数解析 | 5d | 2012-03-16 | 2012-03-22 | 129 | 64d | 0d |  | 程序员C | 40h |

| ID | WBS | Task | Duration | Start | Finish | Predecessors | Total slack | Free slack | Constraint | Resources | Work |
| --- | --- | --- | --- | --- | --- | --- | --- | --- | --- | --- | --- |
| 131 | 5.3 | **质量分布计算报告** | 14d? | 2012-03-19 | 2012-04-05 |  | 65d |  |  |  | 312h |
| 132 | 5.3.1 | 基本属性界面 | 3d | 2012-03-19 | 2012-03-21 | 127 | 59d | 0d | start no earlier than 2012-03-05 | 程序员D | 24h |
| 133 | 5.3.2 | **组件** | 9d? | 2012-03-19 | 2012-03-29 |  | 69d |  |  |  | 120h |
| 134 | 5.3.2.1 | Flexware 报告组件 | 5d | 2012-03-23 | 2012-03-29 | 130 | 64d |  |  | 程序员C | 40h |
| 135 | 5.3.2.2 | 数据库组件 | 5d? | 2012-03-19 | 2012-03-23 | 125 | 69d | 0d | start no earlier than 2012-03-19 | 程序员A; 程序员B | 80h |
| 136 | 5.3.3 | **工具箱标准控件** | 11d? | 2012-03-22 | 2012-04-05 |  | 65d |  |  |  | 168h |
| 137 | 5.3.3.1 | 数据库控件 | 5d? | 2012-03-26 | 2012-03-30 | 135 | 63d |  |  | 程序员A; 程序员B | 80h |
| 138 | 5.3.3.2 | 知识控件 | 3d | 2012-03-22 | 2012-03-26 | 132 | 59d | 0d |  | 程序员D | 24h |
| 139 | 5.3.3.3 | 公式控件 | 5d | 2012-03-27 | 2012-04-02 | 138 | 59d | 0d |  | 程序员D | 40h |
| 140 | 5.3.3.4 | 质量控件 | 3d | 2012-04-03 | 2012-04-05 | 139 | 59d |  |  | 程序员D | 24h |
| 141 | 6 | **质量分步计算 - SimworkFlow扩充功能** | 85d? | 2012-03-01 | 2012-06-27 |  | 6d |  |  |  |  |
| 142 | 6.1 | **数据映射** | 31d? | 2012-03-01 | 2012-04-12 |  | 60d |  |  |  |  |
| 143 | 6.1.1 | **SimworkFlow泛组件自身数据映射** | 13d? | 2012-03-01 | 2012-03-19 |  | 78d |  |  |  |  |
| 144 | 6.1.1.1 | 模型接口数据格式定义、设计 | 2d | 2012-03-01 | 2012-03-02 |  | 80d | 0d | start no earlier than 2012-03-01 |  |  |
| 145 | 6.1.1.2 | 模型接口数据格式开发 | 3d? | 2012-03-05 | 2012-03-07 | 144 | 86d |  | start no earlier than 2012-03-05 |  |  |
| 146 | 6.1.1.3 | **数据映射创建** | 8d? | 2012-03-08 | 2012-03-19 |  | 78d |  |  |  |  |
| 147 | 6.1.1.3.1 | 数据映射描述定义 | 1d | 2012-03-08 | 2012-03-08 |  | 79d |  | start no earlier than 2012-03-08 |  |  |
| 148 | 6.1.1.3.2 | 创建映射规则定义及验证 | 1d? | 2012-03-09 | 2012-03-09 |  | 72d | 0d | start no earlier than 2012-03-09 |  |  |
| 149 | 6.1.1.3.3 | 创建数据映射及联调 | 3d | 2012-03-12 | 2012-03-14 | 148 | 72d | 0d |  |  |  |
| 150 | 6.1.1.3.4 | 数据映射运行时接口开发 | 3d | 2012-03-15 | 2012-03-19 | 149 | 72d |  |  |  |  |
| 151 | 6.1.2 | **数据映射删除** | 2d? | 2012-03-20 | 2012-03-21 |  | 76d |  |  |  |  |
| 152 | 6.1.2.1 | 删除映射规则定义及验证 | 1d? | 2012-03-20 | 2012-03-20 |  | 71d |  | start no earlier than 2012-03-20 |  |  |
| 153 | 6.1.2.2 | 删除数据映射及联调 | 2d | 2012-03-20 | 2012-03-21 |  | 70d |  | start no earlier than 2012-03-20 |  |  |
| 154 | 6.1.3 | **SimworkFlow泛组件与Flexware泛组件映射** | 7d? | 2012-03-22 | 2012-03-30 |  | 69d |  |  |  |  |
| 155 | 6.1.3.1 | **Flexware数据类型、数据结构调研** | 7d? | 2012-03-22 | 2012-03-30 |  | 69d |  |  |  |  |
| 156 | 6.1.3.1.1 | 模型接口数据格式定义、设计 | 1d? | 2012-03-22 | 2012-03-22 |  | 64d | 0d | start no earlier than 2012-03-22 |  |  |
| 157 | 6.1.3.1.2 | 模型接口数据格式开发 | 1d? | 2012-03-23 | 2012-03-23 | 156 | 64d | 0d |  |  |  |

| ID | WBS | Task | Duration | Start | Finish | Predecessors | Total slack | Free slack | Constraint |
| --- | --- | --- | --- | --- | --- | --- | --- | --- | --- |
| 158 | 6.1.3.1.3 | **数据映射创建** | 4d? | 2012-03-26 | 2012-03-29 | 157 | 70d |  |  |
| 159 | 6.1.3.1.3.1 | 数据映射描述定义 | 1d? | 2012-03-26 | 2012-03-26 |  | 64d | 0d | start no earlier than 2012-03-26 |
| 160 | 6.1.3.1.3.2 | 创建映射规则定义及验证 | 2d? | 2012-03-26 | 2012-03-27 |  | 66d |  | finish no earlier than 2012-03-27 |
| 161 | 6.1.3.1.3.3 | 创建数据映射及联调 | 1d? | 2012-03-27 | 2012-03-27 | 159 | 64d | 0d |  |
| 162 | 6.1.3.1.3.4 | 数据映射运行时接口开发 | 2d | 2012-03-28 | 2012-03-29 | 161 | 64d |  |  |
| 163 | 6.1.3.1.4 | **数据映射删除** | 1d? | 2012-03-30 | 2012-03-30 |  | 69d |  |  |
| 164 | 6.1.3.1.4.1 | 删除映射规则定义及验证 | 1d? | 2012-03-30 | 2012-03-30 |  | 63d |  | start no earlier than 2012-03-30 |
| 165 | 6.1.3.1.4.2 | 删除数据映射及联调 | 1d? | 2012-03-30 | 2012-03-30 |  | 63d |  | start no earlier than 2012-03-30 |
| 166 | 6.1.4 | **SimworkFlow与WorkFlow节点数据映射** | 9d? | 2012-04-02 | 2012-04-12 |  | 60d |  |  |
| 167 | 6.1.4.1 | **WorkFlow数据类型、数据结构调研** | 9d? | 2012-04-02 | 2012-04-12 |  | 60d |  |  |
| 168 | 6.1.4.1.1 | 模型接口数据格式定义、设计 | 1d? | 2012-04-02 | 2012-04-02 |  | 61d | 0d | start no earlier than 2012-04-02 |
| 169 | 6.1.4.1.2 | 模型接口数据格式开发 | 1d? | 2012-04-03 | 2012-04-03 | 168 | 61d |  |  |
| 170 | 6.1.4.1.3 | **数据映射创建** | 4d? | 2012-04-04 | 2012-04-09 |  | 63d |  |  |
| 171 | 6.1.4.1.3.1 | 数据映射描述定义 | 1d? | 2012-04-04 | 2012-04-04 |  | 60d |  | start no earlier than 2012-04-04 |
| 172 | 6.1.4.1.3.2 | 创建映射规则定义及验证 | 1d? | 2012-04-04 | 2012-04-04 |  | 57d | 0d | start no earlier than 2012-04-04 |
| 173 | 6.1.4.1.3.3 | 创建数据映射及联调 | 2d | 2012-04-05 | 2012-04-06 | 172 | 57d | 0d |  |
| 174 | 6.1.4.1.3.4 | 数据映射运行时接口开发 | 1d? | 2012-04-09 | 2012-04-09 | 173 | 57d |  |  |
| 175 | 6.1.4.1.4 | **数据映射删除** | 3d? | 2012-04-10 | 2012-04-12 |  | 60d |  |  |
| 176 | 6.1.4.1.4.1 | 删除映射规则定义及验证 | 1d? | 2012-04-10 | 2012-04-10 |  | 54d | 0d | start no earlier than 2012-04-10 |
| 177 | 6.1.4.1.4.2 | 删除数据映射及联调 | 2d | 2012-04-11 | 2012-04-12 | 176 | 54d |  |  |
| 178 | 6.2 | **引擎整合与DRM应用** | 54d? | 2012-04-13 | 2012-06-27 |  | 6d |  |  |
| 179 | 6.2.1 | **提交运行SimworkFlow泛组件** | 22d? | 2012-04-13 | 2012-05-14 |  | 6d |  |  |
| 180 | 6.2.1.1 | **直接运行** | 12d | 2012-04-13 | 2012-04-30 |  | 6d |  |  |
| 181 | 6.2.1.1.1 | 与主引擎之间的接口设计 | 3d | 2012-04-13 | 2012-04-17 |  | 3d | 0d | start no earlier than 2012-04-13 |
| 182 | 6.2.1.1.2 | 与主引擎之间的接口开发 | 5d | 2012-04-18 | 2012-04-24 | 181 | 3d | 0d |  |
| 183 | 6.2.1.1.3 | 运行环境部署 | 2d | 2012-04-25 | 2012-04-26 | 182 | 3d | 0d | start no earlier than 2012-04-13 |
| 184 | 6.2.1.1.4 | 联调测试 | 2d | 2012-04-27 | 2012-04-30 | 183 | 3d | 0d |  |

| ID | WBS | Task | Duration | Start | Finish | Predecessors | Total slack | Free slack | Constraint |
| --- | --- | --- | --- | --- | --- | --- | --- | --- | --- |
| 185 | 6.2.1.2 | **通过DRM运行** | 10d? | 2012-05-01 | 2012-05-14 |  | 6d |  |  |
| 186 | 6.2.1.2.1 | 与主引擎之间的接口设计 | 2d | 2012-05-01 | 2012-05-02 | 184 | 3d | 0d | start no earlier than 2012-04-26 |
| 187 | 6.2.1.2.2 | 与主引擎之间的接口开发 | 5d | 2012-05-03 | 2012-05-09 | 186 | 3d | 0d |  |
| 188 | 6.2.1.2.3 | DRM环境准备 | 2d | 2012-05-10 | 2012-05-11 | 187 | 3d | 0d | start no earlier than 2012-05-04 |
| 189 | 6.2.1.2.4 | 联调测试 | 1d? | 2012-05-14 | 2012-05-14 | 188 | 3d | 0d |  |
| 190 | 6.2.2 | **提交运行Flexware泛组件** | 32d | 2012-05-15 | 2012-06-27 |  | 6d |  |  |
| 191 | 6.2.2.1 | **直接运行** | 13d | 2012-05-15 | 2012-05-31 |  | 6d |  |  |
| 192 | 6.2.2.1.1 | Flexware泛组件执行机制研究 | 2d | 2012-05-15 | 2012-05-16 | 189 | 3d | 0d | start no earlier than 2012-05-09 |
| 193 | 6.2.2.1.2 | 执行引擎修改设计 | 3d | 2012-05-17 | 2012-05-21 | 192 | 3d | 0d |  |
| 194 | 6.2.2.1.3 | 执行引擎修改开发 | 6d | 2012-05-22 | 2012-05-29 | 193 | 3d | 0d |  |
| 195 | 6.2.2.1.4 | 执行环境部署及联调 | 2d | 2012-05-30 | 2012-05-31 | 194 | 3d | 0d |  |
| 196 | 6.2.2.2 | **通过DRM运行** | 19d | 2012-06-01 | 2012-06-27 |  | 6d |  |  |
| 197 | 6.2.2.2.1 | 与主引擎之间的接口设计 | 2d | 2012-06-01 | 2012-06-04 | 195 | 3d | 0d | start no earlier than 2012-05-28 |
| 198 | 6.2.2.2.2 | 与主引擎之间的接口开发 | 5d | 2012-06-05 | 2012-06-11 | 197 | 3d | 0d |  |
| 199 | 6.2.2.2.3 | DRM代码研究 | 3d | 2012-06-12 | 2012-06-14 | 198 | 3d | 0d |  |
| 200 | 6.2.2.2.4 | DRM修改设计 | 3d | 2012-06-15 | 2012-06-19 | 199 | 3d | 0d |  |
| 201 | 6.2.2.2.5 | DRM修改开发 | 4d | 2012-06-20 | 2012-06-25 | 200 | 3d | 0d |  |
| 202 | 6.2.2.2.6 | DRM环境部署及联调 | 2d | 2012-06-26 | 2012-06-27 | 201 | 3d |  |  |
